How a schedule from MS Project changed from version to version. A marks actual dates.

## Version 1 (saved 2023-04-27, file 707carplay20230327.mpp)

| ID | WBS | Task | Duration | Start | Finish | Predecessors | Complete | Total float | Constraint |
| --- | --- | --- | --- | --- | --- | --- | --- | --- | --- |
| 1 |  | UE需求澄清 | 48d | 2023-01-25 | 2023-03-31 |  |  | 184d | finish no earlier than 2023-03-31 |
| 2 | 2 | **Preparation** | 45d | 2023-01-16 A | 2023-03-17 |  | 55% |  |  |
| 3 |  | Ford prepare relevant project approal document | 6d | 2023-01-27 | 2023-02-03 |  |  | 287d | finish no earlier than 2023-02-03 |
| 4 |  | Apple approve PPID | 4d | 2023-01-16 | 2023-01-20 |  |  | 252.88d | start no earlier than 2023-01-16 |
| 5 |  | sample ready for software development | 12d | 2023-03-01 A | 2023-03-17 A |  | 100% |  | start no earlier than 2023-03-01 |
| 6 | 3 | **SW DEV** | 201.88d? | 2023-02-07 | 2023-11-24 |  |  | 0d |  |
| 7 | 3.1 | **驱动适配、Certification** | 15d | 2023-03-17 | 2023-04-10 | 5 |  |  |  |
| 8 |  | bonjour框架移植适配 | 3d | 2023-03-17 | 2023-03-22 |  |  |  |  |
| 9 |  | CarPlayResourceManger框架开发 | 14d | 2023-03-20 | 2023-04-10 |  |  |  |  |
| 10 |  | CarPlayApp框架开发 | 7d | 2023-03-27 | 2023-04-06 |  |  |  |  |
| 11 |  | 苹果MFI芯片适配: Hal层到framework层的调试 | 3d | 2023-03-29 | 2023-04-03 |  |  |  |  |
| 12 |  | IAP2 Stack集成 | 30d | 2023-03-31 | 2023-05-16 | 5FS+10d |  |  |  |
| 13 | 3.3 | **Carplay Plugin集成出图** | 40d? | 2023-03-31 | 2023-05-30 | 5FS+10d |  |  |  |
| 14 |  | 协议栈plugin框架开发 | 21d | 2023-03-22 | 2023-04-21 |  |  |  |  |
| 15 |  | carplay主视频流适配 | 12d | 2023-03-29 | 2023-04-17 |  |  |  |  |
| 16 |  | carplay音乐随心听，后排显示 | 17d | 2023-04-20 | 2023-05-15 |  |  |  |  |
| 17 |  | carplay地图第二路视频流适配card业务 讨论 | 5d | 2023-05-05 | 2023-05-10 |  |  |  |  |
| 18 |  | carplay地图第二路视频流适配card业务 开发 | 9d | 2023-05-10 | 2023-05-22 |  |  |  |  |
| 19 |  | carplay弹窗遮盖第三方交互业务 | 11d | 2023-05-23 | 2023-06-06 |  |  |  |  |
| 20 | 3.4 | **Carplay界面设计/交互设计** | 98d | 2023-02-07 | 2023-06-28 |  |  | 0d |  |
| 21 |  | 定稿的供CarPlay的UI/UE文档 | 39d | 2023-02-07 | 2023-03-31 |  |  |  |  |
| 22 | 3.4.2 | **Carplay界面设计/交互设计（依赖UI设计图确定)）** | 60d | 2023-03-31 | 2023-06-28 | 5FS+10d |  |  |  |
| 23 |  | carplay弹窗遮盖第三方交互业务 | 7d | 2023-03-21 | 2023-03-30 |  |  |  |  |
| 24 |  | cafplay连接业务 | 7d | 2023-04-11 | 2023-04-20 |  |  |  |  |
| 25 |  | carplay重连业务 | 7d | 2023-04-25 | 2023-05-08 |  |  |  |  |
| 26 |  | carplay电话仪表显示业务 | 7d | 2023-05-09 | 2023-05-18 |  |  |  |  |
| 27 |  | carplay接口业务提供 | 7d | 2023-05-18 | 2023-05-29 |  |  |  |  |
| 28 |  | carplay方控按键需求 | 10d | 2023-05-29 | 2023-06-12 |  |  |  |  |
| 29 |  | carplay兼容13以下手机 | 14d | 2023-06-07 | 2023-06-28 |  |  |  |  |
| 30 | 3.5 | **Audio** | 200.88d? | 2023-02-08 | 2023-11-24 |  |  | 0d |  |
| 31 |  | 提供carplay所有接口文档 | 1d | 2023-03-01 | 2023-03-02 |  |  |  |  |
| 32 |  | 延锋提供软件demo版本 | 51d | 2023-02-08 | 2023-04-20 |  |  |  |  |
| 33 |  | audio arbitration management update | 28d | 2023-03-14 | 2023-04-21 |  |  |  |  |
| 34 |  | Audio data control update | 3d | 2023-04-03 | 2023-04-06 |  |  |  |  |
| 35 |  | Audio对接 | 40d | 2023-04-17 | 2023-06-13 | 7FS+5d |  |  |  |
| 36 |  | 提供初版的文档版本 | 15d | 2023-03-15 | 2023-04-06 |  |  |  |  |
| 37 |  | 提供最后的文档版本 | 22d? | 2023-03-15 | 2023-04-14 |  |  |  |  |
| 38 |  | carplay音频流适配焦点适配 | 31d | 2023-04-21 | 2023-06-06 |  |  |  |  |
| 39 |  | aduio对接 创达 开发+联调 | 31d | 2023-04-21 | 2023-06-06 |  |  |  |  |
| 40 |  | aduio对接 百度 开发+联调 (需要百度完成开发工作语音指令) | 30d | 2023-04-21 | 2023-06-05 |  |  |  |  |
| 41 |  | 普通siri适配 | 10d | 2023-05-04 | 2023-05-17 |  |  |  |  |
| 42 | 3.5.12 | **enhanced Siri** | 187d | 2023-02-28 | 2023-11-24 |  |  | 0d |  |
| 43 |  | enhanced Siri MRD release | 33d | 2023-02-28 | 2023-04-14 |  |  |  |  |
| 44 |  | carplay SDK interface list review and release | 18d | 2023-03-28 | 2023-04-21 |  |  |  |  |
| 45 |  | integrate sdk and modeling | 6d | 2023-03-27 | 2023-04-02 |  |  |  |  |
| 46 |  | KW and VAD modeling migration | 125d | 2023-05-29 | 2023-11-24 |  |  |  |  |
| 47 |  | local navigation & Carplay navigation arbitration | 15d | 2023-04-20 | 2023-05-11 |  |  |  |  |
| 48 |  | enhancesiri适配，互斥交互业务 | 23d | 2023-04-24 | 2023-05-26 |  |  |  |  |
| 49 | 3.6 | **Location** | 85d | 2023-03-01 | 2023-07-03 |  |  | 0d |  |
| 50 |  | 提供Location的提供接口和说明文档 | 37d | 2023-03-01 | 2023-04-21 |  |  |  |  |
| 51 |  | 验证接口和说明文档 | 4d | 2023-04-25 | 2023-04-28 |  |  |  |  |
| 52 |  | location nema格式位置上报 | 17d | 2023-05-04 | 2023-05-25 | 51 |  |  |  |
| 53 | 3.6.4 | **Audio开发以支持ECNR调试** | 26d | 2023-05-25 | 2023-07-03 |  |  |  |  |
| 54 |  | audio hal carplay实施 | 4d | 2023-05-04 | 2023-05-09 |  |  |  |  |
| 55 |  | 与car service联调 | 9d | 2023-05-10 | 2023-05-23 |  |  |  |  |
| 56 |  | 系统集成调试&bugfix | 9d | 2023-05-24 | 2023-06-06 |  |  |  |  |
| 57 |  | 性能调优/问题初步解决满足认证(demo软件成熟度百分之70%) | 70d | 2023-02-27 | 2023-06-06 |  |  | 23d | finish no earlier than 2023-06-06 |
| 58 | 5 | **版本计划** | 202.88d | 2023-06-06 | 2024-04-01 |  |  | 0d |  |
| 59 |  | 初版（首个90%）全功能版本 | 16d | 2023-06-06 | 2023-06-28 |  |  |  |  |
| 60 |  | 第一版 | 16d | 2023-06-20 | 2023-07-12 |  |  |  |  |
| 61 |  | 第二版 | 16d | 2023-07-19 | 2023-08-09 |  |  |  |  |
| 62 |  | 第三版 | 16d | 2023-08-23 | 2023-09-13 |  |  |  |  |
| 63 |  | 第四版 | 19d | 2023-10-27 | 2023-11-23 |  |  |  |  |
| 64 |  | 第五版 | 16d | 2023-12-07 | 2023-12-28 |  |  |  |  |
| 65 |  | release 版本 | 1d | 2023-06-06 | 2023-06-07 |  |  |  |  |
| 66 |  | 版本测试计划 | 185d | 2023-07-03 | 2024-04-01 |  |  |  |  |
| 67 |  | 初版（首个90%）全功能版本 | 20d | 2023-07-03 | 2023-07-28 |  |  |  |  |
| 68 |  | 第二版 | 15d | 2023-08-14 | 2023-09-01 |  |  |  |  |
| 69 |  | 第五版 | 8d | 2023-12-28 | 2024-01-10 |  |  |  |  |
| 70 |  | release 版本 | 1d | 2023-06-06 | 2023-06-07 |  |  |  |  |

| ID | WBS | Task | Duration | Start | Finish | Predecessors | Total float | Constraint |
| --- | --- | --- | --- | --- | --- | --- | --- | --- |
| 71 | 6 | **Certification-Wireless CarPlay** | 3574.88d | 2010-06-07 | 2024-03-07 |  | 17d |  |
| 72 | 6.1 | **Certification-台架测试** | 260d | 2023-01-23 | 2024-02-01 |  | 17d |  |
| 73 |  | 台架预测试&正式测试询价 | 15d | 2023-05-09 | 2023-05-30 |  | 171.88d | start no earlier than 2023-05-09 |
| 74 |  | 台架测试定点 | 6d | 2023-05-30 | 2023-06-07 | 73 | 171.88d |  |
| 75 |  | PR PO流程 | 10d | 2023-06-07 | 2023-06-21 | 74 | 171.88d |  |
| 76 |  | 提交无线产品配置信息表（需要多方支持） | 15d | 2023-01-23 | 2023-02-10 | 4 | 252d | finish no earlier than 2023-02-10 |
| 77 |  | 苹果审核产品计划和配置表 | 10d | 2023-02-13 | 2023-02-24 | 76 | 252d |  |
| 78 |  | Carpaly设计文档制作（依赖UI设计图确定) | 40d | 2023-04-07 | 2023-06-02 | 1FS+3d | 184d |  |
| 79 |  | 台架制作（需要原厂外设件到货） | 29d | 2023-04-27 | 2023-06-09 | 5 | 22.88d | start no earlier than 2023-04-27 |
| 80 |  | 第一轮台架预测试 | 15d | 2023-06-13 | 2023-07-04 | 79FS+1d, 57FS+3d | 22d | start no earlier than 2023-06-13 |
| 81 |  | debug | 20d | 2023-06-20 | 2023-07-18 | 80SS+5d | 22d | start no earlier than 2023-06-20 |
| 82 |  | 第二轮台架预测试 | 15d | 2023-07-21 | 2023-08-10 | 81FS+2d | 22d |  |
| 83 |  | 提供自测报告给苹果审核 | 5d | 2023-08-11 | 2023-08-17 | 82 | 22d |  |
| 84 |  | 苹果审核自测报告 | 6d | 2023-08-18 | 2023-08-25 | 83 | 22d |  |
| 85 |  | 台架第一轮正式测试 | 15d | 2023-08-28 | 2023-09-15 | 84 | 22d |  |
| 86 |  | debug | 15d | 2023-09-08 | 2023-09-28 | 85SS+5d | 18d | start no earlier than 2023-09-08 |
| 87 |  | 第三轮台架预测试 | 10d | 2023-10-10 | 2023-10-23 | 86FS+2d | 17d | start no earlier than 2023-10-10 |
| 88 |  | debug | 10d | 2023-10-17 | 2023-10-30 | 87SS+5d | 83d |  |
| 89 |  | 提供自测报告给苹果审核 | 5d | 2023-10-24 | 2023-10-30 | 87 | 17d | start no earlier than 2023-10-24 |
| 90 |  | 苹果审核自测报告 | 6d | 2023-10-31 | 2023-11-07 | 89 | 17d |  |
| 91 |  | 台架第二轮正式测试 | 15d | 2023-11-10 | 2023-11-30 | 90FS+2d | 17d |  |
| 92 |  | debug | 15d | 2023-11-17 | 2023-12-07 | 91SS+5d | 17d |  |
| 93 |  | 第四轮台架预测试 | 10d | 2023-12-12 | 2023-12-25 | 92FS+2d | 17d |  |
| 94 |  | 提供自测报告给苹果审核 | 5d | 2023-12-26 | 2024-01-03 | 93 | 17d |  |
| 95 |  | 苹果审核自测报告 | 6d | 2024-01-04 | 2024-01-11 | 94 | 17d |  |
| 96 |  | 台架第三轮正式测试 | 15d | 2024-01-12 | 2024-02-01 | 95 | 17d |  |
| 97 | 6.2 | **Certification-ITU-T&enhance Siri** | 213d | 2023-02-15 | 2023-12-20 |  | 0d |  |
| 98 |  | 客户提供实车至实验室 | 4d | 2023-08-29 | 2023-09-01 | 12 | 120d | finish no earlier than 2023-09-01 |
| 99 |  | 音频测试(ITU-T Siri Enhanced Siri)询价 | 15d | 2023-04-23 | 2023-05-16 |  | 177.88d | start no earlier than 2023-04-23 |
| 100 |  | 音频测试定点 | 10d | 2023-05-16 | 2023-05-30 | 99 | 177.88d |  |
| 101 |  | PR PO流程 | 10d | 2023-05-30 | 2023-06-13 | 100 | 177.88d |  |
| 102 |  | 延锋提供可ECNR调试软件 | 76d | 2023-02-15 | 2023-06-05 |  |  |  |
| 103 |  | SSOW与供应商确认 | 20d | 2023-04-03 | 2023-05-04 |  |  |  |
| 104 |  | 供应商打分 | 3d | 2023-05-05 | 2023-05-09 |  |  |  |
| 105 |  | 采购上会汇报 | 5d | 2023-05-10 | 2023-05-17 |  |  |  |
| 106 |  | 供应商定点，下PR | 2d | 2023-05-17 | 2023-05-19 |  |  |  |
| 107 |  | 供应商完成debug/apqm | 54d | 2023-07-17 | 2023-10-07 |  |  |  |
| 108 |  | 供应商完成tuning/ITU/Sir | 34d | 2023-10-09 | 2023-11-24 |  |  |  |
| 109 |  | enhance Siri第一轮预测试 | 19.88d | 2023-07-24 | 2023-08-18 |  | 130d | finish no earlier than 2023-08-18 |
| 110 |  | debug | 31d | 2023-08-21 | 2023-10-08 |  | 99d | start no earlier than 2023-08-21 |
| 111 |  | enhance Siri第一轮正式测试 | 15d | 2023-10-09 | 2023-10-27 |  | 84d | start no earlier than 2023-10-09 |
| 112 |  | debug | 20d | 2023-10-30 | 2023-11-24 |  | 64d | start no earlier than 2023-10-30 |
| 113 |  | enhance Siri第二轮正式测试 | 16d | 2023-11-27 | 2023-12-18 |  | 48d | start no earlier than 2023-11-27 |
| 114 |  | 高中低三个车型的主观测试 | 15d | 2023-11-29 | 2023-12-20 |  |  |  |
| 115 | 6.3 | **Certification-路试** | 3500.88d | 2010-06-07 | 2023-11-15 |  | 71d |  |
| 116 |  | 路试预测试询价 | 10d | 2023-05-15 | 2023-05-29 |  | 168.88d | start no earlier than 2023-05-15 |
| 117 |  | 路试预测试定点 | 10d | 2023-05-29 | 2023-06-12 | 116 | 168.88d |  |
| 118 |  | PR PO流程 | 10d | 2023-06-12 | 2023-06-27 | 117 | 168.88d |  |
| 119 |  | （路试）客户提供实车至实验室 | 4d | 2023-07-14 | 2023-07-20 |  | 151.88d | start no earlier than 2023-07-14 |
| 120 |  | 路试测试第一轮预测试 | 5d | 2023-07-24 | 2023-07-28 |  | 51d | start no earlier than 2023-07-24 |
| 121 |  | debug | 15d | 2023-07-31 | 2023-08-18 | 120 | 51d |  |
| 122 |  | 路试测试第二轮预测试 | 5d | 2023-08-21 | 2023-08-25 | 121 | 51d |  |
| 123 |  | debug | 15d | 2023-08-28 | 2023-09-15 | 122 | 51d |  |
| 124 |  | 约正式实验室 | 15d | 2023-08-28 | 2023-09-15 | 122 | 56d |  |
| 125 |  | 路试第三轮预测试 | 5d | 2023-09-18 | 2023-09-22 | 123 | 51d |  |
| 126 |  | 路试正式测试询价 | 10d | 2010-06-07 | 2010-06-21 |  | 3546.88d | start no earlier than 2010-06-07 |
| 127 |  | 路试正式测试定点 | 5d | 2010-06-21 | 2010-06-28 | 126 | 3546.88d |  |
| 128 |  | PR PO流程 | 10d | 2010-06-28 | 2010-07-12 | 127 | 3546.88d |  |
| 129 |  | 正式测试第一轮 | 6d | 2023-09-25 | 2023-10-08 | 124, 125 | 51d |  |
| 130 |  | debug | 18d | 2023-10-09 | 2023-11-01 | 129 | 51d |  |
| 131 |  | 路试第四轮预测试 | 5d | 2023-11-02 | 2023-11-08 | 130 | 51d |  |
| 132 |  | 约正式实验室 | 15d | 2023-10-09 | 2023-10-27 | 129 | 59d |  |
| 133 |  | 正式测试第二轮 | 5d | 2023-11-09 | 2023-11-15 | 130, 132, 131 | 51d |  |
| 134 | 6.4 | **Certification-Performance** | 3514.88d | 2010-06-07 | 2023-12-05 |  | 57d |  |
| 135 |  | （Performance）客户提供实车至实验室 | 4d | 2023-07-24 | 2023-07-28 |  | 145.88d | start no earlier than 2023-07-24 |
| 136 |  | performance测试第一轮预测试 | 5d | 2023-07-31 | 2023-08-04 |  | 57d | start no earlier than 2023-07-31 |
| 137 |  | debug | 20d | 2023-08-07 | 2023-09-01 | 136 | 57d |  |
| 138 |  | performance测试第二轮预测试 | 5d | 2023-09-04 | 2023-09-08 | 137 | 57d |  |
| 139 |  | debug | 15d | 2023-09-11 | 2023-10-07 | 138 | 62d |  |
| 140 |  | 约正式实验室 | 15d | 2023-09-11 | 2023-10-07 | 138 | 57d |  |

| ID | Task | Duration | Start | Finish | Predecessors | Total float | Constraint |
| --- | --- | --- | --- | --- | --- | --- | --- |
| 141 | performance测试第三轮预测试 | 5d | 2023-10-08 | 2023-10-12 | 140 | 57d |  |
| 142 | Performance 正式测试询价 | 10d | 2010-06-07 | 2010-06-21 |  | 3561.88d | start no earlier than 2010-06-07 |
| 143 | Performance 正式测试定点 | 5d | 2010-06-21 | 2010-06-28 |  | 3556.88d | start no earlier than 2010-06-21 |
| 144 | PR PO流程 | 10d | 2010-06-28 | 2010-07-12 |  | 3546.88d | start no earlier than 2010-06-28 |
| 145 | 正式测试第一轮 | 5d | 2023-10-13 | 2023-10-19 | 139, 140, 141 | 57d |  |
| 146 | debug | 15d | 2023-10-20 | 2023-11-09 | 145 | 57d |  |
| 147 | Performance测试第四轮预测试 | 5d | 2023-11-10 | 2023-11-16 | 146 | 65d |  |
| 148 | 约正式实验室 | 15d | 2023-11-08 | 2023-11-28 | 146FS-2d | 57d |  |
| 149 | 正式测试第二轮 | 5d | 2023-11-29 | 2023-12-05 | 145, 146, 148, 147 | 57d |  |
| 150 | 实际产品截图设计文档制作 | 20d | 2023-11-16 | 2023-12-13 | 133 | 51d |  |
| 151 | 苹果审核最终认证结果 | 20d | 2024-02-02 | 2024-03-07 | 150, 72, 97, 115, 134 | 17d |  |

## Version 2 (saved 2023-05-23, file 707carplay20230523-.mpp)

Last finish stays 2024-04-01. Complete tasks 1 → 44.

Added:

| ID | Task | Duration | Start | Finish | Predecessors |
| --- | --- | --- | --- | --- | --- |
| 55 | audio 与cerence 联调 | 5d | 2023-06-13 | 2023-06-19 | 54 |
| 107 | cerence 提供 carplay 参数 | 10d | 2023-05-19 | 2023-06-02 | 106FS+10d |

Changed:

| ID | Task | Start | Finish | Duration | Complete | Total float | Predecessors | Other |
| --- | --- | --- | --- | --- | --- | --- | --- | --- |
| 1 | UE需求澄清 | 2023-01-25 A | 2023-03-31 A |  | 0% → 100% | 184d → none |  | baseline start none → 2023-01-25; baseline finish none → 2023-03-31 |
| 2 | **Preparation** |  | 2023-03-17 A | 45d → 44d | 55% → 100% |  |  | baseline start none → 2023-01-16; baseline finish none → 2023-03-17 |
| 3 | Ford prepare relevant project approal document | 2023-01-27 A | 2023-02-03 A |  | 0% → 100% | 287d → none |  | baseline start none → 2023-01-27; baseline finish none → 2023-02-03 |
| 4 | Apple approve PPID | 2023-01-16 A | 2023-01-20 A |  | 0% → 100% | 252.88d → none |  | baseline start none → 2023-01-16; baseline finish none → 2023-01-20 |
| 5 | sample ready for software development |  |  |  |  |  |  | baseline start none → 2023-03-01; baseline finish none → 2023-03-17 |
| 6 | **SW DEV** | 2023-02-07 A |  |  | 0% → 74% | 0d → 85d |  | baseline start none → 2023-02-07; baseline finish none → 2023-11-24 |
| 7 | **驱动适配、Certification** | 2023-03-17 A | 2023-04-10 A |  | 0% → 100% |  |  | baseline start none → 2023-03-17; baseline finish none → 2023-04-10 |
| 8 | bonjour框架移植适配 | 2023-03-17 A | 2023-03-22 A |  | 0% → 100% |  |  | baseline start none → 2023-03-17; baseline finish none → 2023-03-22 |
| 9 | CarPlayResourceManger框架开发 | 2023-03-20 A | 2023-04-10 A |  | 0% → 100% |  |  | baseline start none → 2023-03-20; baseline finish none → 2023-04-10 |
| 10 | CarPlayApp框架开发 | 2023-03-27 A | 2023-04-06 A |  | 0% → 100% |  |  | baseline start none → 2023-03-27; baseline finish none → 2023-04-06 |
| 11 | 苹果MFI芯片适配: Hal层到framework层的调试 | 2023-03-29 A | 2023-04-03 A |  | 0% → 100% |  |  | baseline start none → 2023-03-29; baseline finish none → 2023-04-03 |
| 12 | IAP2 Stack集成 | 2023-03-31 A | 2023-05-16 A |  | 0% → 100% |  |  | baseline start none → 2023-03-31; baseline finish none → 2023-05-16 |
| 13 | **Carplay Plugin集成出图** |  |  |  | 0% → 97% |  |  | baseline start none → 2023-03-31; baseline finish none → 2023-05-30 |
| 14 | 协议栈plugin框架开发 | 2023-03-22 A | 2023-04-21 A |  | 0% → 100% |  |  | baseline start none → 2023-03-22; baseline finish none → 2023-04-21 |
| 15 | carplay主视频流适配 | 2023-03-29 A | 2023-04-17 A |  | 0% → 100% |  |  | baseline start none → 2023-03-29; baseline finish none → 2023-04-17 |
| 16 | carplay音乐随心听，后排显示 | 2023-04-20 A | 2023-05-15 A |  | 0% → 100% |  |  | baseline start none → 2023-04-20; baseline finish none → 2023-05-15 |
| 17 | carplay地图第二路视频流适配card业务 讨论 | 2023-05-05 A | 2023-05-10 → 2023-05-22 A (+12d) | 5d → 13d | 0% → 100% |  |  | baseline start none → 2023-05-05; baseline finish none → 2023-05-22 |
| 18 | carplay地图第二路视频流适配card业务 开发 | 2023-05-10 → 2023-05-23 A (+13d) | 2023-05-22 → 2023-05-25 (+3d) | 9d → 3d | 0% → 33% |  | none → 17 | baseline start none → 2023-05-23; baseline finish none → 2023-05-25 |
| 19 | carplay弹窗遮盖第三方交互业务 | 2023-05-23 → 2023-05-15 A (-8d) | 2023-06-06 → 2023-05-15 A (-22d) | 11d → 1d | 0% → 100% |  |  | baseline start none → 2023-05-15; baseline finish none → 2023-05-15 |
| 20 | **Carplay界面设计/交互设计** | 2023-02-07 A |  |  | 0% → 86% |  |  | baseline start none → 2023-02-07; baseline finish none → 2023-06-28 |
| 21 | 定稿的供CarPlay的UI/UE文档 | 2023-02-07 A | 2023-03-31 A |  | 0% → 100% |  |  | baseline start none → 2023-02-07; baseline finish none → 2023-03-31 |
| 22 | **Carplay界面设计/交互设计（依赖UI设计图确定)）** | 2023-03-31 → 2023-03-21 A (-10d) |  | 60d → 68d | 0% → 77% | none → 0d |  | baseline start none → 2023-03-21; baseline finish none → 2023-06-28 |
| 23 | carplay弹窗遮盖第三方交互业务 | 2023-03-21 A | 2023-03-30 A |  | 0% → 100% |  |  | baseline start none → 2023-03-21; baseline finish none → 2023-03-30 |
| 24 | cafplay连接业务 | 2023-04-11 A | 2023-04-20 A |  | 0% → 100% |  |  | baseline start none → 2023-04-11; baseline finish none → 2023-04-20 |
| 25 | carplay重连业务 | 2023-04-25 A | 2023-05-08 A |  | 0% → 100% |  |  | baseline start none → 2023-04-25; baseline finish none → 2023-05-08 |
| 26 | carplay电话仪表显示业务 | 2023-05-09 A | 2023-05-18 A |  | 0% → 100% |  |  | baseline start none → 2023-05-09; baseline finish none → 2023-05-18 |
| 27 | carplay接口业务提供 | 2023-05-18 A |  |  | 0% → 90% |  |  | baseline start none → 2023-05-18; baseline finish none → 2023-05-29 |
| 28 | carplay方控按键需求 | 2023-05-29 A |  | 10d → 10.88d | 0% → 70% |  |  | baseline start none → 2023-05-29; baseline finish none → 2023-06-12 |
| 29 | carplay兼容13以下手机 | 2023-06-07 A |  |  | 0% → 30% |  |  | baseline start none → 2023-06-07; baseline finish none → 2023-06-28 |
| 30 | **Audio** | 2023-02-08 A |  | 200.88d? → 200.88d | 0% → 65% |  |  | baseline start none → 2023-02-08; baseline finish none → 2023-11-24 |
| 31 | 提供carplay所有接口文档 | 2023-03-01 A | 2023-03-02 A |  | 0% → 100% |  |  | baseline start none → 2023-03-01; baseline finish none → 2023-03-02 |
| 32 | 延锋提供软件demo版本 | 2023-02-08 A | 2023-04-20 A |  | 0% → 100% |  |  | baseline start none → 2023-02-08; baseline finish none → 2023-04-20 |
| 33 | audio arbitration management update | 2023-03-14 A | 2023-04-21 A |  | 0% → 100% |  |  | baseline start none → 2023-03-14; baseline finish none → 2023-04-21 |
| 34 | Audio data control update | 2023-04-03 A | 2023-04-06 A |  | 0% → 100% |  |  | baseline start none → 2023-04-03; baseline finish none → 2023-04-06 |
| 35 | Audio对接 | 2023-04-17 A |  |  | 0% → 65% |  |  | baseline start none → 2023-04-17; baseline finish none → 2023-06-13 |
| 36 | 提供初版的文档版本 | 2023-03-15 A | 2023-04-06 A |  | 0% → 100% |  |  | baseline start none → 2023-03-15; baseline finish none → 2023-04-06 |
| 37 | 提供最后的文档版本 | 2023-03-15 A | 2023-04-14 A | 22d? → 22d | 0% → 100% |  |  | baseline start none → 2023-03-15; baseline finish none → 2023-04-14 |
| 38 | carplay音频流适配焦点适配 | 2023-04-21 A |  |  | 0% → 71% |  |  | baseline start none → 2023-04-21; baseline finish none → 2023-06-06 |
| 39 | aduio对接 创达 开发+联调 | 2023-04-21 A |  |  | 0% → 71% |  |  | baseline start none → 2023-04-21; baseline finish none → 2023-06-06 |
| 40 | aduio对接 百度 开发+联调 (需要百度完成开发工作语音指令) | 2023-04-21 A |  |  | 0% → 73% |  |  | baseline start none → 2023-04-21; baseline finish none → 2023-06-05 |
| 41 | 普通siri适配 | 2023-05-04 A | 2023-05-17 A |  | 0% → 100% |  |  | baseline start none → 2023-05-04; baseline finish none → 2023-05-17 |
| 42 | **enhanced Siri** | 2023-02-28 A |  |  | 0% → 44% |  |  | baseline start none → 2023-02-28; baseline finish none → 2023-11-24 |
| 43 | enhanced Siri MRD release | 2023-02-28 A | 2023-04-14 A |  | 0% → 100% |  |  | baseline start none → 2023-02-28; baseline finish none → 2023-04-14 |
| 44 | carplay SDK interface list review and release | 2023-03-28 A | 2023-04-21 A |  | 0% → 100% |  |  | baseline start none → 2023-03-28; baseline finish none → 2023-04-21 |
| 45 | integrate sdk and modeling | 2023-03-27 A | 2023-04-02 A |  | 0% → 100% |  |  | baseline start none → 2023-03-27; baseline finish none → 2023-04-02 |
| 46 | KW and VAD modeling migration |  |  |  |  |  |  | baseline start none → 2023-05-29; baseline finish none → 2023-11-24 |
| 47 | local navigation & Carplay navigation arbitration | 2023-04-20 A | 2023-05-11 → 2023-05-25 (+14d) | 15d → 25d | 0% → 95% |  |  | baseline start none → 2023-04-20; baseline finish none → 2023-05-25 |
| 48 | enhancesiri适配，互斥交互业务 | 2023-04-24 A |  |  | 0% → 87% |  |  | baseline start none → 2023-04-24; baseline finish none → 2023-05-26 |
| 49 | **Location** | 2023-03-01 A | 2023-07-03 → 2023-07-10 (+7d) | 85d → 90.88d | 0% → 70% | 0d → 180d |  | baseline start none → 2023-03-01; baseline finish none → 2023-07-10 |
| 50 | 提供Location的提供接口和说明文档 | 2023-03-01 A | 2023-04-21 A |  | 0% → 100% |  |  | baseline start none → 2023-03-01; baseline finish none → 2023-04-21 |
| 51 | 验证接口和说明文档 | 2023-04-25 A | 2023-04-28 A |  | 0% → 100% |  |  | baseline start none → 2023-04-25; baseline finish none → 2023-04-28 |
| 52 | location nema格式位置上报 | 2023-05-04 A | 2023-05-25 A |  | 0% → 100% |  |  | baseline start none → 2023-05-04; baseline finish none → 2023-05-25 |
| 53 | **Audio开发以支持ECNR调试** |  | 2023-07-03 → 2023-07-10 (+7d) | 26d → 31.88d |  |  |  | baseline start none → 2023-05-25; baseline finish none → 2023-07-10 |
| 54 | audio hal carplay实施 | 2023-05-04 → 2023-06-06 (+33d) | 2023-05-09 → 2023-06-12 (+34d) | 4d → 5d |  |  | none → 103FS+10d | baseline start none → 2023-06-06; baseline finish none → 2023-06-12 |
| 56 | 与car service联调 | 2023-05-10 → 2023-06-20 (+41d) | 2023-05-23 → 2023-06-27 (+35d) | 9d → 5d |  |  |  | baseline start none → 2023-06-20; baseline finish none → 2023-06-27 |
| 57 | 系统集成调试&bugfix | 2023-05-24 → 2023-06-26 (+33d) | 2023-06-06 → 2023-07-07 (+31d) | 9d → 10d |  | none → 181d |  | constraint none → start no earlier than 2023-06-26; baseline start none → 2023-06-26; baseline finish none → 2023-07-07 |
| 58 | 性能调优/问题初步解决满足认证(demo软件成熟度百分之70%) | 2023-02-27 A |  |  | 0% → 86% | 23d → 24d |  | baseline start none → 2023-02-27; baseline finish none → 2023-06-06 |
| 59 | **版本计划** |  |  | 202.88d → 203.88d |  |  |  | baseline start none → 2023-06-06; baseline finish none → 2024-04-01 |
| 60 | 初版（首个90%）全功能版本 |  |  |  |  |  |  | baseline start none → 2023-06-06; baseline finish none → 2023-06-28 |
| 61 | 第一版 |  |  |  |  |  |  | baseline start none → 2023-06-20; baseline finish none → 2023-07-12 |
| 62 | 第二版 |  |  |  |  |  |  | baseline start none → 2023-07-19; baseline finish none → 2023-08-09 |
| 63 | 第三版 |  |  |  |  |  |  | baseline start none → 2023-08-23; baseline finish none → 2023-09-13 |
| 64 | 第四版 |  |  |  |  |  |  | baseline start none → 2023-10-27; baseline finish none → 2023-11-23 |
| 65 | 第五版 |  |  |  |  |  |  | baseline start none → 2023-12-07; baseline finish none → 2023-12-28 |
| 66 | release 版本 |  |  |  |  |  |  | baseline start none → 2023-06-06; baseline finish none → 2023-06-07 |
| 67 | 版本测试计划 |  |  | 185d → 186d |  |  |  | baseline start none → 2023-07-03; baseline finish none → 2024-04-01 |
| 68 | 初版（首个90%）全功能版本 |  |  |  |  |  |  | baseline start none → 2023-07-03; baseline finish none → 2023-07-28 |
| 69 | 第二版 |  |  |  |  |  |  | baseline start none → 2023-08-14; baseline finish none → 2023-09-01 |
| 70 | 第五版 |  |  | 8d → 9d |  |  |  | baseline start none → 2023-12-28; baseline finish none → 2024-01-10 |
| 71 | release 版本 |  |  |  |  |  |  | baseline start none → 2023-06-06; baseline finish none → 2023-06-07 |

| ID | Task | Start | Finish | Duration | Complete | Total float | Predecessors | Other |
| --- | --- | --- | --- | --- | --- | --- | --- | --- |
| 72 | **Certification-Wireless CarPlay** | 2010-06-07 → 2023-01-23 A (+4613d) | 2024-03-07 → 2024-03-06 (-1d) | 3574.88d → 280d | 0% → 21% | 17d → 18d |  | baseline start none → 2023-01-23; baseline finish none → 2024-03-06 |
| 73 | **Certification-台架测试** | 2023-01-23 A | 2024-02-01 → 2024-01-31 (-1d) |  | 0% → 27% | 17d → 18d |  | baseline start none → 2023-01-23; baseline finish none → 2024-01-31 |
| 74 | 台架预测试&正式测试询价 | 2023-05-09 A |  |  | 0% → 80% | 171.88d → 172.88d |  | baseline start none → 2023-05-09; baseline finish none → 2023-05-30 |
| 75 | 台架测试定点 |  |  |  |  | 171.88d → 172.88d |  | baseline start none → 2023-05-30; baseline finish none → 2023-06-07 |
| 76 | PR PO流程 |  |  |  |  | 171.88d → 172.88d |  | baseline start none → 2023-06-07; baseline finish none → 2023-06-21 |
| 77 | 提交无线产品配置信息表（需要多方支持） | 2023-01-23 A | 2023-02-10 A |  | 0% → 100% | 252d → none |  | baseline start none → 2023-01-23; baseline finish none → 2023-02-10 |
| 78 | 苹果审核产品计划和配置表 | 2023-02-13 A | 2023-02-24 A |  | 0% → 100% | 252d → none |  | baseline start none → 2023-02-13; baseline finish none → 2023-02-24 |
| 79 | Carpaly设计文档制作（依赖UI设计图确定) | 2023-04-07 A | 2023-06-02 → 2023-06-16 (+14d) | 40d → 50d | 0% → 65% | 184d → 175d |  | constraint none → finish no earlier than 2023-06-16; baseline start none → 2023-04-07; baseline finish none → 2023-06-02 |
| 80 | 台架制作（需要原厂外设件到货） | 2023-04-27 A |  |  | 0% → 65% | 22.88d → 23.88d |  | baseline start none → 2023-04-27; baseline finish none → 2023-06-09 |
| 81 | 第一轮台架预测试 |  |  |  |  | 22d → 23d |  | baseline start none → 2023-06-13; baseline finish none → 2023-07-04 |
| 82 | debug |  |  |  |  | 22d → 23d |  | baseline start none → 2023-06-20; baseline finish none → 2023-07-18 |
| 83 | 第二轮台架预测试 |  |  |  |  | 22d → 23d |  | baseline start none → 2023-07-21; baseline finish none → 2023-08-10 |
| 84 | 提供自测报告给苹果审核 |  |  |  |  | 22d → 23d |  | baseline start none → 2023-08-11; baseline finish none → 2023-08-17 |
| 85 | 苹果审核自测报告 |  |  |  |  | 22d → 23d |  | baseline start none → 2023-08-18; baseline finish none → 2023-08-25 |
| 86 | 台架第一轮正式测试 |  |  |  |  | 22d → 23d |  | baseline start none → 2023-08-28; baseline finish none → 2023-09-15 |
| 87 | debug |  |  |  |  | 18d → 19d |  | baseline start none → 2023-09-08; baseline finish none → 2023-09-28 |
| 88 | 第三轮台架预测试 |  |  |  |  | 17d → 18d |  | baseline start none → 2023-10-10; baseline finish none → 2023-10-23 |
| 89 | debug |  |  |  |  | 83d → 84d |  | baseline start none → 2023-10-17; baseline finish none → 2023-10-30 |
| 90 | 提供自测报告给苹果审核 |  |  |  |  | 17d → 18d |  | baseline start none → 2023-10-24; baseline finish none → 2023-10-30 |
| 91 | 苹果审核自测报告 |  |  |  |  | 17d → 18d |  | baseline start none → 2023-10-31; baseline finish none → 2023-11-07 |
| 92 | 台架第二轮正式测试 |  |  |  |  | 17d → 18d |  | baseline start none → 2023-11-10; baseline finish none → 2023-11-30 |
| 93 | debug |  |  |  |  | 17d → 18d |  | baseline start none → 2023-11-17; baseline finish none → 2023-12-07 |
| 94 | 第四轮台架预测试 |  |  |  |  | 17d → 18d |  | baseline start none → 2023-12-12; baseline finish none → 2023-12-25 |
| 95 | 提供自测报告给苹果审核 |  | 2024-01-03 → 2024-01-02 (-1d) |  |  | 17d → 18d |  | baseline start none → 2023-12-26; baseline finish none → 2024-01-02 |
| 96 | 苹果审核自测报告 | 2024-01-04 → 2024-01-03 (-1d) | 2024-01-11 → 2024-01-10 (-1d) |  |  | 17d → 18d |  | baseline start none → 2024-01-03; baseline finish none → 2024-01-10 |
| 97 | 台架第三轮正式测试 | 2024-01-12 → 2024-01-11 (-1d) | 2024-02-01 → 2024-01-31 (-1d) |  |  | 17d → 18d |  | baseline start none → 2024-01-11; baseline finish none → 2024-01-31 |
| 98 | **Certification-ITU-T&enhance Siri** | 2023-02-15 → 2023-04-03 A (+47d) |  | 213d → 180d | 0% → 20% | 0d → 47.88d |  | baseline start none → 2023-04-03; baseline finish none → 2023-12-20 |
| 99 | 客户提供实车至实验室 |  |  |  |  | 120d → 121d |  | baseline start none → 2023-08-29; baseline finish none → 2023-09-01 |
| 100 | 音频测试(ITU-T Siri Enhanced Siri)询价 | 2023-04-23 A | 2023-05-16 A |  | 0% → 100% | 177.88d → none |  | baseline start none → 2023-04-23; baseline finish none → 2023-05-16 |
| 101 | 音频测试定点 | 2023-05-16 A |  |  | 0% → 59% | 177.88d → 178.88d |  | baseline start none → 2023-05-16; baseline finish none → 2023-05-30 |
| 102 | PR PO流程 |  |  |  |  | 177.88d → 178.88d |  | baseline start none → 2023-05-30; baseline finish none → 2023-06-13 |
| 103 | SSOW与供应商确认 | 2023-04-03 A | 2023-05-04 → 2023-05-22 A (+18d) | 20d → 33.88d | 0% → 100% |  |  | baseline start none → 2023-04-03; baseline finish none → 2023-05-22 |
| 104 | 供应商打分 | 2023-05-05 A | 2023-05-09 A |  | 0% → 100% |  |  | baseline start none → 2023-05-05; baseline finish none → 2023-05-09 |
| 105 | 采购上会汇报 | 2023-05-10 A |  |  | 0% → 60% |  |  | baseline start none → 2023-05-10; baseline finish none → 2023-05-17 |
| 106 | 供应商定点，下PR | 2023-05-17 A | 2023-05-19 A |  | 0% → 100% |  |  | baseline start none → 2023-05-17; baseline finish none → 2023-05-19 |
| 108 | 延锋提供可ECNR调试软件 | 2023-02-15 → 2023-06-20 (+125d) | 2023-06-05 → 2023-07-04 (+29d) | 76d → 10d |  |  | none → 55, 107 | baseline start none → 2023-06-06; baseline finish none → 2023-06-19 |
| 109 | 供应商完成debug/apqm |  |  |  |  |  |  | baseline start none → 2023-07-17; baseline finish none → 2023-10-07 |
| 110 | 供应商完成tuning/ITU/Sir |  |  |  |  |  |  | baseline start none → 2023-10-09; baseline finish none → 2023-11-24 |
| 111 | enhance Siri第一轮预测试 |  |  |  |  | 130d → 131d |  | baseline start none → 2023-07-24; baseline finish none → 2023-08-18 |
| 112 | debug |  |  |  |  | 99d → 100d |  | baseline start none → 2023-08-21; baseline finish none → 2023-10-08 |
| 113 | enhance Siri第一轮正式测试 |  |  |  |  | 84d → 85d |  | baseline start none → 2023-10-09; baseline finish none → 2023-10-27 |
| 114 | debug |  |  |  |  | 64d → 65d |  | baseline start none → 2023-10-30; baseline finish none → 2023-11-24 |
| 115 | enhance Siri第二轮正式测试 |  |  |  |  | 48d → 49d |  | baseline start none → 2023-11-27; baseline finish none → 2023-12-18 |
| 116 | 高中低三个车型的主观测试 |  |  |  |  |  |  | baseline start none → 2023-11-29; baseline finish none → 2023-12-20 |
| 117 | **Certification-路试** | 2010-06-07 → 2023-05-15 A (+4725d) |  | 3500.88d → 127.88d | 0% → 19% | 71d → 72d |  | baseline start none → 2023-05-15; baseline finish none → 2023-11-15 |
| 118 | 路试预测试询价 | 2023-05-15 A |  |  | 0% → 69% | 168.88d → 169.88d |  | baseline start none → 2023-05-15; baseline finish none → 2023-05-29 |
| 119 | 路试预测试定点 |  |  |  |  | 168.88d → 169.88d |  | baseline start none → 2023-05-29; baseline finish none → 2023-06-12 |
| 120 | PR PO流程 |  |  |  |  | 168.88d → 169.88d |  | baseline start none → 2023-06-12; baseline finish none → 2023-06-27 |
| 121 | （路试）客户提供实车至实验室 |  |  |  |  | 151.88d → 152.88d |  | baseline start none → 2023-07-14; baseline finish none → 2023-07-20 |
| 122 | 路试测试第一轮预测试 |  |  |  |  | 51d → 52d |  | baseline start none → 2023-07-24; baseline finish none → 2023-07-28 |
| 123 | debug |  |  |  |  | 51d → 52d |  | baseline start none → 2023-07-31; baseline finish none → 2023-08-18 |
| 124 | 路试测试第二轮预测试 |  |  |  |  | 51d → 52d |  | baseline start none → 2023-08-21; baseline finish none → 2023-08-25 |
| 125 | debug |  |  |  |  | 51d → 52d |  | baseline start none → 2023-08-28; baseline finish none → 2023-09-15 |
| 126 | 约正式实验室 |  |  |  |  | 56d → 57d |  | baseline start none → 2023-08-28; baseline finish none → 2023-09-15 |
| 127 | 路试第三轮预测试 |  |  |  |  | 51d → 52d |  | baseline start none → 2023-09-18; baseline finish none → 2023-09-22 |
| 128 | 路试正式测试询价 | 2010-06-07 → 2023-06-07 A (+4748d) | 2010-06-21 → 2023-06-20 A (+4747d) |  | 0% → 100% | 3546.88d → none |  | baseline start none → 2023-06-07; baseline finish none → 2023-06-20 |
| 129 | 路试正式测试定点 | 2010-06-21 → 2023-06-21 A (+4748d) | 2010-06-28 → 2023-06-28 A (+4748d) |  | 0% → 100% | 3546.88d → none |  | baseline start none → 2023-06-21; baseline finish none → 2023-06-28 |
| 130 | PR PO流程 | 2010-06-28 → 2023-06-29 A (+4749d) | 2010-07-12 → 2023-07-12 A (+4748d) |  | 0% → 100% | 3546.88d → none |  | baseline start none → 2023-06-29; baseline finish none → 2023-07-12 |
| 131 | 正式测试第一轮 |  |  |  |  | 51d → 52d |  | baseline start none → 2023-09-25; baseline finish none → 2023-10-08 |
| 132 | debug |  |  |  |  | 51d → 52d |  | baseline start none → 2023-10-09; baseline finish none → 2023-11-01 |
| 133 | 路试第四轮预测试 |  |  |  |  | 51d → 52d |  | baseline start none → 2023-11-02; baseline finish none → 2023-11-08 |
| 134 | 约正式实验室 |  |  |  |  | 59d → 60d |  | baseline start none → 2023-10-09; baseline finish none → 2023-10-27 |
| 135 | 正式测试第二轮 |  |  |  |  | 51d → 52d |  | baseline start none → 2023-11-09; baseline finish none → 2023-11-15 |
| 136 | **Certification-Performance** | 2010-06-07 → 2023-06-07 A (+4748d) |  | 3514.88d → 125d | 0% → 18% | 57d → 58d |  | baseline start none → 2023-06-07; baseline finish none → 2023-12-05 |
| 137 | （Performance）客户提供实车至实验室 |  |  |  |  | 145.88d → 146.88d |  | baseline start none → 2023-07-24; baseline finish none → 2023-07-28 |
| 138 | performance测试第一轮预测试 |  |  |  |  | 57d → 58d |  | baseline start none → 2023-07-31; baseline finish none → 2023-08-04 |
| 139 | debug |  |  |  |  | 57d → 58d |  | baseline start none → 2023-08-07; baseline finish none → 2023-09-01 |
| 140 | performance测试第二轮预测试 |  |  |  |  | 57d → 58d |  | baseline start none → 2023-09-04; baseline finish none → 2023-09-08 |
| 141 | debug |  |  |  |  | 62d → 63d |  | baseline start none → 2023-09-11; baseline finish none → 2023-10-07 |
| 142 | 约正式实验室 |  |  |  |  | 57d → 58d |  | baseline start none → 2023-09-11; baseline finish none → 2023-10-07 |

| ID | Task | Start | Finish | Complete | Total float | Other |
| --- | --- | --- | --- | --- | --- | --- |
| 143 | performance测试第三轮预测试 |  |  |  | 57d → 58d | baseline start none → 2023-10-08; baseline finish none → 2023-10-12 |
| 144 | Performance 正式测试询价 | 2010-06-07 → 2023-06-07 A (+4748d) | 2010-06-21 → 2023-06-20 A (+4747d) | 0% → 100% | 3561.88d → none | baseline start none → 2023-06-07; baseline finish none → 2023-06-20 |
| 145 | Performance 正式测试定点 | 2010-06-21 → 2023-06-21 A (+4748d) | 2010-06-28 → 2023-06-28 A (+4748d) | 0% → 100% | 3556.88d → none | baseline start none → 2023-06-21; baseline finish none → 2023-06-28 |
| 146 | PR PO流程 | 2010-06-28 → 2023-06-29 A (+4749d) | 2010-07-12 → 2023-07-12 A (+4748d) | 0% → 100% | 3546.88d → none | baseline start none → 2023-06-29; baseline finish none → 2023-07-12 |
| 147 | 正式测试第一轮 |  |  |  | 57d → 58d | baseline start none → 2023-10-13; baseline finish none → 2023-10-19 |
| 148 | debug |  |  |  | 57d → 58d | baseline start none → 2023-10-20; baseline finish none → 2023-11-09 |
| 149 | Performance测试第四轮预测试 |  |  |  | 65d → 66d | baseline start none → 2023-11-10; baseline finish none → 2023-11-16 |
| 150 | 约正式实验室 |  |  |  | 57d → 58d | baseline start none → 2023-11-08; baseline finish none → 2023-11-28 |
| 151 | 正式测试第二轮 |  |  |  | 57d → 58d | baseline start none → 2023-11-29; baseline finish none → 2023-12-05 |
| 152 | 实际产品截图设计文档制作 |  |  |  | 51d → 52d | baseline start none → 2023-11-16; baseline finish none → 2023-12-13 |
| 153 | 苹果审核最终认证结果 | 2024-02-02 → 2024-02-01 (-1d) | 2024-03-07 → 2024-03-06 (-1d) |  | 17d → 18d | baseline start none → 2024-02-01; baseline finish none → 2024-03-06 |

## Version 3 (saved 2023-05-27, file 707carplay20230525.mpp)

Last finish stays 2024-04-01. Complete tasks 44 → 45.

Removed: 146 PR PO流程; 150 约正式实验室

Changed:

| ID | Task | Start | Finish | Duration | Complete | Total float | Predecessors | Other |
| --- | --- | --- | --- | --- | --- | --- | --- | --- |
| 13 | **Carplay Plugin集成出图** |  |  |  | 97% → 98% |  |  |  |
| 18 | carplay地图第二路视频流适配card业务 开发 |  |  |  | 33% → 50% |  |  |  |
| 20 | **Carplay界面设计/交互设计** |  |  |  | 86% → 87% |  |  |  |
| 22 | **Carplay界面设计/交互设计（依赖UI设计图确定)）** |  |  |  | 77% → 79% |  |  |  |
| 29 | carplay兼容13以下手机 |  |  |  | 30% → 40% |  |  |  |
| 30 | **Audio** |  |  |  | 65% → 66% |  |  |  |
| 35 | Audio对接 |  |  |  | 65% → 70% |  |  |  |
| 59 | **版本计划** |  |  | 203.88d → 203d |  |  |  |  |
| 60 | 初版（首个90%）全功能版本 |  | 2023-06-28 → 2023-06-12 (-16d) | 16d → 4d |  |  |  |  |
| 72 | **Certification-Wireless CarPlay** |  |  |  | 21% → 22% | 18d → 17.12d |  |  |
| 73 | **Certification-台架测试** |  |  |  | 27% → 28% | 18d → 17.12d |  |  |
| 74 | 台架预测试&正式测试询价 |  | 2023-05-30 → 2023-05-16 A (-14d) | 15d → 5d | 80% → 100% | 172.88d → none |  | constraint start no earlier than 2023-05-09 → finish no earlier than 2023-05-09 |
| 75 | 台架测试定点 | 2023-05-30 → 2023-05-16 A (-14d) | 2023-06-07 → 2023-05-24 A (-14d) |  | 0% → 100% | 172.88d → none |  |  |
| 76 | PR PO流程 | 2023-06-07 → 2023-05-24 (-14d) | 2023-06-21 → 2023-06-07 (-14d) |  |  | 172.88d → 182d |  |  |
| 80 | 台架制作（需要原厂外设件到货） |  |  | 29d → 29.88d | 65% → 63% | 23.88d → 22.12d |  | constraint start no earlier than 2023-04-27 → finish no earlier than 2023-06-09 |
| 98 | **Certification-ITU-T&enhance Siri** |  |  |  | 20% → 21% | 47.88d → 47d |  |  |
| 102 | 音频测试定点 |  | 2023-05-30 → 2023-05-22 A (-8d) | 10d → 4.88d | 59% → 100% | 178.88d → none |  |  |
| 105 | 供应商定点，下PR,PO |  | 2023-05-19 A → 2023-06-02 (+14d) | 2d → 12.88d | 100% → 40% |  |  | was named 供应商定点，下PR |
| 106 | cerence 提供 carplay 参数 | 2023-05-19 → 2023-06-19 (+31d) | 2023-06-02 → 2023-07-03 (+31d) |  |  | none → 154.12d |  |  |
| 107 | 延锋提供可ECNR调试软件 | 2023-06-20 → 2023-07-04 (+14d) | 2023-07-04 → 2023-07-17 (+13d) |  |  | none → 154.12d |  |  |
| 116 | **Certification-路试** |  |  |  | 19% → 21% | 72d → 71.12d |  |  |
| 117 | 路试预测试询价 |  |  |  | 69% → 95% | 169.88d → 169d |  |  |
| 135 | **Certification-Performance** |  |  |  | 18% → 16% | 58d → 57.12d |  |  |
| 141 | performance测试第三轮预测试 | 2023-10-08 → 2023-09-11 (-27d) | 2023-10-12 → 2023-10-07 (-5d) | 5d → 15d |  | 58d → 57.12d | 148 → 139 | baseline start 2023-10-08 → 2023-09-11; baseline finish 2023-10-12 → 2023-10-07 |
| 142 | Performance 正式测试询价 | 2023-06-07 A → 2023-10-08 (+123d) | 2023-06-20 A → 2023-10-12 (+114d) | 10d → 5d | 100% → 0% | none → 57.12d | none → 141 | constraint start no earlier than 2010-06-07 → none; resources none → gaoliang; baseline start 2023-06-07 → 2023-10-08; baseline finish 2023-06-20 → 2023-10-12 |
| 143 | Performance 正式测试定点 | 2023-06-21 A → 2023-06-07 A (-14d) | 2023-06-28 A → 2023-06-20 A (-8d) | 5d → 10d |  |  |  | constraint start no earlier than 2010-06-21 → start no earlier than 2010-06-07; baseline start 2023-06-21 → 2023-06-07; baseline finish 2023-06-28 → 2023-06-20 |
| 144 | PR PO流程 | 2023-05-30 → 2023-06-21 A (+22d) | 2023-06-13 → 2023-06-28 (+15d) | 10d → 5d | 0% → 50% | 178.88d → 167.12d | 102 → none | constraint none → start no earlier than 2010-06-21; baseline start 2023-05-30 → 2023-06-21; baseline finish 2023-06-13 → 2023-06-28 |
| 145 | 正式测试第一轮 | 2023-10-13 → 2023-06-29 A (-106d) | 2023-10-19 → 2023-07-12 A (-99d) | 5d → 10d | 0% → 100% | 58d → none | 140, 148, 141 → none | constraint none → start no earlier than 2010-06-28; resources gaoliang → none; baseline start 2023-10-13 → 2023-06-29; baseline finish 2023-10-19 → 2023-07-12 |
| 146 | debug | 2023-10-20 → 2023-10-13 (-7d) | 2023-11-09 → 2023-10-19 (-21d) | 15d → 5d |  | 58d → 57.12d | 145 → 140, 141, 142 | resources shenhu → gaoliang; baseline start 2023-10-20 → 2023-10-13; baseline finish 2023-11-09 → 2023-10-19 |
| 147 | Performance测试第四轮预测试 | 2023-11-10 → 2023-10-20 (-21d) | 2023-11-16 → 2023-11-09 (-7d) | 5d → 15d |  | 66d → 57.12d |  | resources gaoliang → shenhu; baseline start 2023-11-10 → 2023-10-20; baseline finish 2023-11-16 → 2023-11-09 |
| 148 | 约正式实验室 | 2023-09-11 → 2023-11-10 (+60d) | 2023-10-07 → 2023-11-16 (+40d) | 15d → 5d |  | 58d → 65.12d | 139 → 147 | baseline start 2023-09-11 → 2023-11-10; baseline finish 2023-10-07 → 2023-11-16 |
| 150 | 正式测试第二轮 |  |  |  |  | 58d → 57.12d | 145, 146, 147, 约正式实验室 → 146, 147, 148 |  |

## Version 4 (saved 2023-06-01, file 707carplay20230601.mpp)

Last finish stays 2024-04-01. Complete tasks 45 → 48.

Added:

| ID | Task | Duration | Start | Finish |
| --- | --- | --- | --- | --- |
| 106 | enhance siri供应商定点，下PR,PO | 15d | 2023-06-05 | 2023-06-26 |

Changed:

| ID | Task | Start | Finish | Duration | Complete | Total float | Other |
| --- | --- | --- | --- | --- | --- | --- | --- |
| 6 | **SW DEV** |  | 2023-11-24 → 2024-01-22 (+59d) | 201.88d? → 241.62d? | 74% → 78% | 84.12d → 44.38d |  |
| 13 | **Carplay Plugin集成出图** |  |  |  | 98% → 93% |  |  |
| 18 | carplay地图第二路视频流适配card业务 开发 |  | 2023-05-25 → 2023-06-08 (+14d) | 3d → 13d | 50% → 60% | none → 200.12d |  |
| 20 | **Carplay界面设计/交互设计** |  | 2023-06-28 → 2023-06-12 (-16d) | 98d → 87.88d | 87% → 95% |  |  |
| 22 | **Carplay界面设计/交互设计（依赖UI设计图确定)）** |  | 2023-06-28 → 2023-06-12 (-16d) | 68d → 57.88d | 79% → 91% |  |  |
| 29 | carplay兼容13以下手机 |  | 2023-06-28 → 2023-06-08 (-20d) | 14d → 1.88d | 40% → 75% |  |  |
| 30 | **Audio** |  | 2023-11-24 → 2024-01-22 (+59d) | 200.88d → 240.62d | 66% → 72% |  |  |
| 38 | carplay音频流适配焦点适配 |  |  |  | 71% → 93% |  |  |
| 39 | aduio对接 创达 开发+联调 |  |  |  | 71% → 93% |  |  |
| 40 | aduio对接 百度 开发+联调 (需要百度完成开发工作语音指令) |  |  |  | 73% → 96% |  |  |
| 42 | **enhanced Siri** |  | 2023-11-24 → 2024-01-22 (+59d) | 187d → 226.75d | 44% → 47% |  |  |
| 46 | KW and VAD modeling migration | 2023-05-29 A | 2023-11-24 → 2024-01-22 (+59d) |  | 0% → 3% |  |  |
| 47 | local navigation & Carplay navigation arbitration |  | 2023-05-25 A |  | 95% → 100% |  |  |
| 48 | enhancesiri适配，互斥交互业务 |  | 2023-05-26 A |  | 87% → 100% |  |  |
| 49 | **Location** |  | 2023-07-10 → 2023-05-25 A (-46d) | 90.88d → 59.88d | 70% → 100% | 179.12d → none |  |
| 53 | **Audio开发以支持ECNR调试** | 2023-05-25 → 2023-06-06 (+12d) | 2023-07-10 → 2023-07-07 (-3d) | 31.88d → 23d |  | none → 0d |  |
| 58 | 性能调优/问题初步解决满足认证(demo软件成熟度百分之70%) |  |  |  | 86% → 96% |  |  |
| 76 | PR PO流程 | 2023-05-24 A |  |  | 0% → 10% |  |  |
| 104 | 采购上会汇报 |  | 2023-05-17 A |  | 60% → 100% |  |  |
| 105 | siri 供应商定点，下PR,PO |  | 2023-06-02 → 2023-06-05 (+3d) | 12.88d → 13d |  |  | was named 供应商定点，下PR,PO |
| 107 | cerence 提供 carplay 参数 |  | 2023-07-03 → 2023-07-04 (+1d) |  |  | 154.12d → 154d |  |
| 108 | 延锋提供可ECNR调试软件 |  | 2023-07-17 → 2023-07-18 (+1d) |  |  | 154.12d → 154d |  |

## Version 5 (saved 2023-06-12, file 707carplay20230612.mpp)

Last finish stays 2024-04-01. Complete tasks 48 → 61.

Changed:

| ID | Task | Start | Finish | Duration | Complete | Total float | Other |
| --- | --- | --- | --- | --- | --- | --- | --- |
| 6 | **SW DEV** |  |  |  | 78% → 82% |  | baseline finish 2023-11-24 → 2024-01-22 |
| 13 | **Carplay Plugin集成出图** |  |  |  | 93% → 99% |  |  |
| 18 | carplay地图第二路视频流适配card业务 开发 |  | 2023-06-08 A |  | 60% → 100% | 200.12d → none | baseline finish 2023-05-25 → 2023-06-08 |
| 20 | **Carplay界面设计/交互设计** |  |  |  | 95% → 99% |  | baseline finish 2023-06-28 → 2023-06-12 |
| 22 | **Carplay界面设计/交互设计（依赖UI设计图确定)）** |  |  |  | 91% → 99% |  | baseline finish 2023-06-28 → 2023-06-12 |
| 27 | carplay接口业务提供 |  | 2023-05-29 A |  | 90% → 100% |  |  |
| 28 | carplay方控按键需求 |  | 2023-06-12 A |  | 70% → 100% |  |  |
| 29 | carplay兼容13以下手机 |  | 2023-06-08 A |  | 75% → 100% |  | baseline finish 2023-06-28 → 2023-06-08 |
| 30 | **Audio** |  |  |  | 72% → 75% |  | baseline finish 2023-11-24 → 2024-01-22 |
| 35 | Audio对接 |  | 2023-06-13 A |  | 70% → 100% |  |  |
| 38 | carplay音频流适配焦点适配 |  | 2023-06-06 A |  | 93% → 100% |  |  |
| 39 | aduio对接 创达 开发+联调 |  | 2023-06-06 A |  | 93% → 100% |  |  |
| 40 | aduio对接 百度 开发+联调 (需要百度完成开发工作语音指令) |  | 2023-06-05 A |  | 96% → 100% |  |  |
| 42 | **enhanced Siri** |  |  |  |  |  | baseline finish 2023-11-24 → 2024-01-22 |
| 46 | KW and VAD modeling migration |  |  |  |  |  | baseline finish 2023-11-24 → 2024-01-22 |
| 49 | **Location** |  |  |  |  |  | baseline finish 2023-07-10 → 2023-05-25 |
| 53 | **Audio开发以支持ECNR调试** |  |  |  |  |  | baseline start 2023-05-25 → 2023-06-06; baseline finish 2023-07-10 → 2023-07-07 |
| 60 | 初版（首个90%）全功能版本 |  |  |  |  |  | baseline finish 2023-06-28 → 2023-06-12 |
| 70 | 第五版 |  |  |  |  |  | baseline finish 2024-01-10 → 2024-01-09 |
| 72 | **Certification-Wireless CarPlay** |  |  |  | 22% → 27% |  |  |
| 73 | **Certification-台架测试** |  |  |  | 28% → 40% |  |  |
| 74 | 台架预测试&正式测试询价 |  |  |  |  |  | baseline finish 2023-05-30 → 2023-05-16 |
| 75 | 台架测试定点 |  |  |  |  |  | baseline start 2023-05-30 → 2023-05-16; baseline finish 2023-06-07 → 2023-05-24 |
| 76 | PR PO流程 |  | 2023-06-07 A |  | 10% → 100% | 182d → none | baseline start 2023-06-07 → 2023-05-24; baseline finish 2023-06-21 → 2023-06-07 |
| 79 | Carpaly设计文档制作（依赖UI设计图确定) |  | 2023-06-16 A |  | 65% → 100% | 174.12d → none | baseline finish 2023-06-02 → 2023-06-16 |
| 80 | 台架制作（需要原厂外设件到货） |  | 2023-06-09 A |  | 63% → 100% | 22.12d → none |  |
| 98 | **Certification-ITU-T&enhance Siri** |  |  |  | 21% → 24% |  |  |
| 102 | 音频测试定点 |  |  |  |  |  | baseline finish 2023-05-30 → 2023-05-22 |
| 103 | SSOW与供应商确认 |  | 2023-05-22 A → 2023-06-06 A (+15d) | 33.88d → 44.88d |  |  | baseline finish 2023-05-22 → 2023-06-06 |
| 105 | siri 供应商定点，下PR,PO |  |  |  |  |  | baseline finish 2023-05-19 → 2023-06-05 |
| 106 | enhance siri供应商定点，下PR,PO |  |  |  |  |  | baseline start none → 2023-06-05; baseline finish none → 2023-06-26 |
| 107 | cerence 提供 carplay 参数 |  |  |  |  |  | baseline start 2023-05-19 → 2023-06-19; baseline finish 2023-06-02 → 2023-07-04 |
| 108 | 延锋提供可ECNR调试软件 |  |  |  |  |  | baseline start 2023-06-06 → 2023-07-04; baseline finish 2023-06-19 → 2023-07-18 |
| 117 | **Certification-路试** |  |  |  | 21% → 27% |  |  |
| 118 | 路试预测试询价 |  | 2023-05-29 A |  | 95% → 100% | 169d → none |  |
| 119 | 路试预测试定点 | 2023-05-29 A | 2023-06-12 A |  | 0% → 100% | 169d → none |  |

## Version 6 (saved 2023-06-29, file 707carplay20230629.mpp)

Last finish 2024-04-01 → 2024-03-06 (-26d). Complete tasks 61 → 64.

Removed: 67 版本测试计划

Changed:

| ID | Task | Start | Finish | Duration | Complete | Total float | Predecessors | Other |
| --- | --- | --- | --- | --- | --- | --- | --- | --- |
| 6 | **SW DEV** |  |  | 241.62d? → 241.62d |  | 44.38d → 27.25d |  |  |
| 13 | **Carplay Plugin集成出图** |  | 2023-05-30 → 2023-06-08 (+9d) | 40d? → 47.88d |  |  |  |  |
| 22 | **Carplay界面设计/交互设计（依赖UI设计图确定)）** |  | 2023-06-12 A |  | 99% → 100% | 0d → none |  |  |
| 53 | **Audio开发以支持ECNR调试** | 2023-06-06 A |  |  | 0% → 20% | 0d → 163d |  |  |
| 54 | audio hal carplay实施 | 2023-06-06 A | 2023-06-12 A |  | 0% → 100% |  |  |  |
| 59 | **版本计划** | 2023-06-06 A | 2024-04-01 → 2024-01-10 (-82d) | 203d → 150.88d | 0% → 14% | 0d → 35d |  |  |
| 60 | 初版（首个90%）全功能版本 | 2023-06-06 A | 2023-06-12 A |  | 0% → 100% |  |  |  |
| 61 | 第一版 | 2023-06-20 → 2023-07-18 (+28d) | 2023-07-12 → 2023-07-20 (+8d) | 16d → 3d |  | none → 154d | none → 81FS-1d |  |
| 62 | 第二版 | 2023-07-19 → 2023-08-21 (+33d) | 2023-08-09 → 2023-08-25 (+16d) | 16d → 5d |  |  | none → 85SS-5d |  |
| 63 | 第三版 | 2023-08-23 → 2023-10-07 (+45d) | 2023-09-13 → 2023-10-09 (+26d) | 16d → 3d |  |  | none → 87SS-3d |  |
| 64 | 第四版 | 2023-10-27 → 2023-11-01 (+5d) | 2023-11-23 → 2023-11-10 (-13d) | 19d → 8d |  |  |  |  |
| 65 | 第五版 | 2023-12-07 → 2024-01-03 (+27d) | 2023-12-28 → 2024-01-10 (+13d) | 16d → 6d |  |  |  |  |
| 66 | **release 版本(功能测试)** | 2023-06-06 → 2023-07-03 (+27d) | 2023-06-07 → 2024-01-09 (+216d) | 1d → 131.88d |  | none → 0d |  | was named release 版本 |
| 70 | release 版本 | 2023-06-06 → 2023-07-03 (+27d) | 2023-06-07 → 2023-07-04 (+27d) |  |  |  |  |  |
| 71 | **Certification-Wireless CarPlay** |  |  |  | 27% → 30% | 17.12d → 0d |  |  |
| 72 | **Certification-台架测试** |  |  |  | 40% → 46% | 17.12d → 0d |  |  |
| 80 | 第一轮台架预测试 | 2023-06-13 A |  |  | 0% → 80% | 22.12d → 146d |  |  |
| 81 | debug | 2023-06-20 A |  |  | 0% → 35% | 22.12d → 5d |  |  |
| 97 | **Certification-ITU-T&enhance Siri** |  |  |  | 24% → 26% | 47d → 29.88d |  |  |
| 104 | siri 供应商定点，下PR,PO |  | 2023-06-05 A |  | 40% → 100% |  |  |  |

## Version 7 (saved 2023-07-20, file 707carplay20230720.mpp)

Last finish stays 2024-03-06. Complete tasks 64 → 75.

Changed:

| ID | Task | Start | Finish | Duration | Complete | Total float | Other |
| --- | --- | --- | --- | --- | --- | --- | --- |
| 6 | **SW DEV** |  | 2024-01-22 → 2023-11-24 (-59d) | 241.62d → 201.88d | 82% → 89% | 27.25d → 0d |  |
| 30 | **Audio** |  | 2024-01-22 → 2023-11-24 (-59d) | 240.62d → 200.88d | 75% → 82% |  |  |
| 42 | **enhanced Siri** |  | 2024-01-22 → 2023-11-24 (-59d) | 226.75d → 187d | 47% → 62% |  |  |
| 46 | KW and VAD modeling migration |  | 2024-01-22 → 2023-11-24 (-59d) |  | 3% → 30% |  |  |
| 53 | **Audio开发以支持ECNR调试** |  | 2023-07-07 → 2023-07-13 (+6d) | 23d → 27d | 20% → 99% | 163d → 0d |  |
| 55 | audio 与cerence 联调 | 2023-06-13 A | 2023-06-19 A |  | 0% → 100% | 146d → none |  |
| 56 | 与car service联调 | 2023-06-20 A | 2023-06-27 → 2023-07-13 A (+16d) | 5d → 17d | 0% → 100% |  |  |
| 57 | 系统集成调试&bugfix | 2023-06-26 → 2023-06-30 A (+4d) | 2023-07-07 → 2023-07-13 A (+6d) |  | 0% → 100% | 163d → none | constraint start no earlier than 2023-06-26 → finish no earlier than 2023-07-13 |
| 58 | 性能调优/问题初步解决满足认证(demo软件成熟度百分之70%) |  | 2023-06-06 A |  | 96% → 100% | 13d → none |  |
| 66 | **release 版本(功能测试)** | 2023-07-03 A |  |  | 0% → 31% |  |  |
| 67 | 初版（首个90%）全功能版本 | 2023-07-03 A |  |  | 0% → 69% |  |  |
| 71 | **Certification-Wireless CarPlay** |  |  |  | 30% → 37% |  |  |
| 72 | **Certification-台架测试** |  |  |  | 46% → 52% |  |  |
| 80 | 第一轮台架预测试 |  | 2023-07-04 → 2023-07-12 A (+8d) | 15d → 21d | 80% → 100% | 146d → none | constraint start no earlier than 2023-06-13 → finish no earlier than 2023-07-12 |
| 81 | debug |  | 2023-07-18 A |  | 35% → 100% | 5d → none |  |
| 97 | **Certification-ITU-T&enhance Siri** |  |  |  | 26% → 37% |  |  |
| 105 | enhance siri供应商定点，下PR,PO | 2023-06-05 A | 2023-06-26 A |  | 0% → 100% |  |  |
| 106 | cerence 提供 carplay 参数 | 2023-06-19 A | 2023-07-04 A |  | 0% → 100% | 136.88d → none |  |
| 107 | 延锋提供可ECNR调试软件 | 2023-07-04 A | 2023-07-18 → 2023-07-14 A (-4d) | 10d → 8.88d | 0% → 100% | 136.88d → none | constraint none → finish no earlier than 2023-07-14 |
| 108 | 供应商完成debug/apqm | 2023-07-17 A |  |  | 0% → 5% |  |  |
| 116 | **Certification-路试** |  |  |  | 27% → 33% |  |  |
| 119 | PR PO流程 | 2023-06-12 A | 2023-06-27 A |  | 0% → 100% | 151.88d → none |  |
| 135 | **Certification-Performance** |  |  |  | 16% → 18% |  |  |
| 144 | PR PO流程 |  | 2023-06-28 A |  | 50% → 100% | 150d → none |  |

## Version 8 (saved 2023-07-25, file 707carplay20230725.mpp)

Last finish stays 2024-03-06. Complete tasks 75 → 78.

Added:

| ID | Task | Duration | Start | Finish | Predecessors | Constraint | Resources |
| --- | --- | --- | --- | --- | --- | --- | --- |
| 114 | enhance Siri第三轮正式测试 | 5d | 2023-10-09 | 2023-10-13 |  | start no earlier than 2023-10-09 | gaoliang |
| 149 | debug | 5d | 2023-10-20 | 2023-10-26 | 147FS-2d, 146 | start no earlier than 2023-10-20 | gaoliang |

Removed: 110 enhance Siri第一轮预测试

Changed:

| ID | Task | Start | Finish | Duration | Complete | Total float | Predecessors | Other |
| --- | --- | --- | --- | --- | --- | --- | --- | --- |
| 6 | **SW DEV** |  |  |  | 89% → 90% |  |  |  |
| 30 | **Audio** |  |  |  | 82% → 83% |  |  |  |
| 42 | **enhanced Siri** |  |  |  | 62% → 63% |  |  |  |
| 46 | KW and VAD modeling migration |  |  |  | 30% → 33% |  |  |  |
| 59 | **版本计划** |  |  |  | 14% → 24% | 35d → 0d |  |  |
| 61 | 第一版 | 2023-07-18 → 2023-07-25 A (+7d) | 2023-07-20 → 2023-07-27 A (+7d) |  | 0% → 100% | 154d → none |  |  |
| 71 | **Certification-Wireless CarPlay** |  |  |  | 37% → 44% |  |  |  |
| 72 | **Certification-台架测试** |  |  |  | 52% → 53% |  |  |  |
| 81 | debug |  | 2023-07-18 A → 2023-07-25 A (+7d) | 20d → 25d |  |  |  | constraint start no earlier than 2023-06-20 → finish no earlier than 2023-07-25 |
| 82 | 第二轮台架预测试 | 2023-07-21 → 2023-07-28 (+7d) | 2023-08-10 → 2023-08-17 (+7d) |  |  | 5d → 0d |  |  |
| 83 | 提供自测报告给苹果审核 | 2023-08-11 → 2023-08-18 (+7d) | 2023-08-17 → 2023-08-24 (+7d) |  |  | 5d → 0d |  |  |
| 84 | 苹果审核自测报告 | 2023-08-18 → 2023-08-25 (+7d) | 2023-08-25 → 2023-09-01 (+7d) |  |  | 5d → 0d |  |  |
| 85 | 台架第一轮正式测试 | 2023-08-28 → 2023-09-04 (+7d) | 2023-09-15 → 2023-09-22 (+7d) |  |  | 5d → 0d |  |  |
| 86 | debug | 2023-09-08 → 2023-09-11 (+3d) | 2023-09-28 → 2023-10-07 (+9d) |  |  | 1d → 0d |  |  |
| 97 | **Certification-ITU-T&enhance Siri** |  |  |  | 37% → 45% |  |  |  |
| 108 | 供应商完成debug/apqm |  |  |  | 5% → 13% |  |  |  |
| 110 | enhance Siri第一轮正式测试 | 2023-10-09 → 2023-07-24 A (-77d) | 2023-10-27 → 2023-07-31 (-88d) | 15d → 6d | 0% → 10% | 67d → 99d |  | constraint start no earlier than 2023-10-09 → start no earlier than 2023-07-24; baseline start 2023-10-09 → 2023-07-24; baseline finish 2023-10-27 → 2023-08-18 |
| 111 | debug | 2023-08-21 → 2023-08-01 (-20d) | 2023-10-08 → 2023-09-07 (-31d) | 31d → 28d |  | 82d → 99d | none → 110 | constraint start no earlier than 2023-08-21 → start no earlier than 2023-08-01 |
| 112 | enhance Siri第二轮正式测试 | 2023-11-27 → 2023-09-11 (-77d) | 2023-12-18 → 2023-09-15 (-94d) | 16d → 5d |  | 31d → 83d |  | constraint start no earlier than 2023-11-27 → finish no earlier than 2023-09-15; baseline start 2023-11-27 → 2023-10-09; baseline finish 2023-12-18 → 2023-10-27 |
| 113 | debug | 2023-10-30 → 2023-09-18 (-42d) | 2023-11-24 → 2023-10-07 (-48d) | 20d → 10d |  | 47d → 83d | none → 112 | constraint start no earlier than 2023-10-30 → none |
| 116 | **Certification-路试** |  | 2023-11-15 → 2023-11-02 (-13d) | 127.88d → 118.88d | 33% → 38% | 54d → 61d |  |  |
| 120 | （路试）客户提供实车至实验室 | 2023-07-14 → 2023-07-20 A (+6d) | 2023-07-20 → 2023-07-25 A (+5d) |  | 0% → 100% | 134.88d → none |  | constraint start no earlier than 2023-07-14 → finish no earlier than 2023-07-25 |
| 121 | 路试测试第一轮预测试 | 2023-07-24 → 2023-07-26 (+2d) | 2023-07-28 → 2023-08-01 (+4d) |  |  | 34d → 61d | none → 120 |  |
| 122 | debug | 2023-07-31 → 2023-08-02 (+2d) | 2023-08-18 → 2023-08-11 (-7d) | 15d → 8d |  | 34d → 61d |  | constraint none → finish no earlier than 2023-08-11 |
| 123 | 路试测试第二轮预测试 | 2023-08-21 → 2023-08-14 (-7d) | 2023-08-25 → 2023-08-17 (-8d) | 5d → 4d |  | 34d → 61d |  |  |
| 124 | debug | 2023-08-28 → 2023-08-18 (-10d) | 2023-09-15 → 2023-09-07 (-8d) |  |  | 34d → 61d |  |  |
| 125 | 约正式实验室 | 2023-08-28 → 2023-08-18 (-10d) | 2023-09-15 → 2023-09-07 (-8d) |  |  | 39d → 66d |  |  |
| 126 | 路试第三轮预测试 | 2023-09-18 → 2023-09-08 (-10d) | 2023-09-22 → 2023-09-14 (-8d) |  |  | 34d → 61d |  |  |
| 130 | 正式测试第一轮 | 2023-09-25 → 2023-09-15 (-10d) | 2023-10-08 → 2023-09-20 (-18d) | 6d → 4d |  | 34d → 61d |  |  |
| 131 | debug | 2023-10-09 → 2023-09-21 (-18d) | 2023-11-01 → 2023-10-20 (-12d) |  |  | 34d → 61d |  |  |
| 132 | 路试第四轮预测试 | 2023-11-02 → 2023-10-23 (-10d) | 2023-11-08 → 2023-10-27 (-12d) |  |  | 34d → 61d |  |  |
| 133 | 约正式实验室 | 2023-10-09 → 2023-09-21 (-18d) | 2023-10-27 → 2023-10-17 (-10d) |  |  | 42d → 69d |  |  |
| 134 | 正式测试第二轮 | 2023-11-09 → 2023-10-30 (-10d) | 2023-11-15 → 2023-11-02 (-13d) | 5d → 4d |  | 34d → 61d |  |  |
| 135 | **Certification-Performance** |  | 2023-12-05 → 2023-11-06 (-29d) | 125d → 104d | 18% → 20% | 40d → 61d |  |  |
| 136 | （Performance）客户提供实车至实验室 |  | 2023-07-28 → 2023-07-25 (-3d) | 4d → 1.88d |  | 128.88d → 131d |  | constraint start no earlier than 2023-07-24 → finish no earlier than 2023-07-25 |
| 138 | debug |  | 2023-09-01 → 2023-08-16 (-16d) | 20d → 8d |  | 40d → 76d |  |  |
| 139 | performance测试第二轮预测试 | 2023-09-04 → 2023-08-17 (-18d) | 2023-09-08 → 2023-08-18 (-21d) | 5d → 2d |  | 40d → 76d |  |  |
| 140 | debug | 2023-09-11 → 2023-08-21 (-21d) | 2023-10-07 → 2023-09-08 (-29d) |  |  | 45d → 76d |  |  |
| 141 | performance测试第三轮预测试 | 2023-09-11 → 2023-08-21 (-21d) | 2023-10-07 → 2023-08-25 (-43d) | 15d → 5d |  | 40d → 81d |  |  |
| 142 | Performance 正式测试询价 | 2023-10-08 → 2023-08-28 (-41d) | 2023-10-12 → 2023-09-01 (-41d) |  |  | 40d → 81d |  |  |
| 145 | 正式测试第一轮 | 2023-06-29 A → 2023-09-21 A (+84d) | 2023-07-12 A → 2023-09-22 A (+72d) | 10d → 2d |  |  | none → 130 |  |
| 146 | debug | 2023-10-13 → 2023-09-25 (-18d) | 2023-10-19 → 2023-10-12 (-7d) | 5d → 10d |  | 40d → 66d | 140, 141, 142 → 140, 141, 142, 145 |  |
| 147 | Performance测试第四轮预测试 | 2023-10-20 → 2023-10-13 (-7d) | 2023-11-09 → 2023-10-19 (-21d) | 15d → 5d |  | 40d → 66d |  |  |
| 148 | 约正式实验室 | 2023-11-10 → 2023-10-20 (-21d) | 2023-11-16 → 2023-10-26 (-21d) |  |  | 48d → 66d |  |  |
| 150 | 正式测试第二轮 | 2023-11-29 → 2023-11-03 (-26d) | 2023-12-05 → 2023-11-06 (-29d) | 5d → 2d |  | 40d → 61d | 146, 147, 148 → 146, 147, 148, 149, 134 |  |
| 151 | 实际产品截图设计文档制作 | 2023-11-16 → 2023-07-05 A (-134d) | 2023-12-13 → 2023-07-25 A (-141d) | 20d → 15d | 0% → 100% | 34d → none | 134 → none | constraint none → start no earlier than 2023-07-05 |
