# Carplay development

How a schedule from MS Project changed from version to version. A marks actual dates.

## Version 1 (data date 2023-03-27, saved 2023-07-31, file SYNC+3.0 U6xx_carplay plan_ 20230724.mpp)

| ID | WBS | Task | Duration | Start | Finish | Predecessors | Complete | Total float | Constraint |
| --- | --- | --- | --- | --- | --- | --- | --- | --- | --- |
| 1 |  | U611MCA | 1d? | 2021-03-31 | 2021-03-31 |  |  |  |  |
| 2 |  | DCV | 1d | 2023-02-08 | 2023-02-08 |  |  |  |  |
| 3 |  | PEC | 1d? | 2023-08-11 | 2023-08-11 |  |  |  |  |
| 4 |  | FEC | 1d? | 2023-09-06 | 2023-09-06 |  |  |  |  |
| 5 |  | TT | 1d? | 2023-09-20 | 2023-09-20 |  |  |  |  |
| 6 |  | PP | 1d? | 2023-12-06 | 2023-12-06 |  |  |  |  |
| 7 |  | MP1 | 1d | 2021-03-31 | 2021-03-31 |  |  |  |  |
| 8 |  | OKTB | 1d | 2021-03-31 | 2021-03-31 |  |  |  |  |
| 9 |  | U625ICA2/MCA | 1d? | 2021-03-31 | 2021-03-31 |  |  |  |  |
| 10 |  | FDJ | 1d? | 2023-05-26 | 2023-05-26 |  |  |  |  |
| 11 |  | DCV | 1d | 2021-03-31 | 2021-03-31 |  |  |  |  |
| 12 |  | PEC | 1d | 2021-03-31 | 2021-03-31 |  |  |  |  |
| 13 |  | FEC | 1d | 2021-03-31 | 2021-03-31 |  |  |  |  |
| 14 |  | TT | 1d | 2021-03-31 | 2021-03-31 |  |  |  |  |
| 15 |  | PP | 1d | 2021-03-31 | 2021-03-31 |  |  |  |  |
| 16 |  | MP1 | 1d | 2021-03-31 | 2021-03-31 |  |  |  |  |
| 17 |  | OKTB of U625ICA2 | 1d | 2021-03-31 | 2021-03-31 |  |  |  |  |
| 18 | 18 | **SYNC+ 3.0(U6xx)** | 308d? | 2023-03-01 A | 2024-05-22 |  | 24% | 0d |  |
| 19 |  | PO planned to be approved by 2023-3-28 (12 weeks-8 weeks resource limitation dependency for 707) | 1d? | 2023-04-13 A | 2023-04-13 A |  | 100% |  | start no earlier than 2023-04-13 |
| 20 |  | UE Review and release | 15d | 2023-04-18 A | 2023-05-05 A |  | 100% |  | start no earlier than 2023-04-18 |
| 21 |  | UI review and release | 15d | 2023-04-18 A | 2023-05-05 A |  | 100% |  | start no earlier than 2023-04-18 |
| 22 |  | UI UE sign off | 8d | 2023-05-06 A | 2023-05-16 A | 21 | 100% |  |  |
| 23 |  | HW available - with MFI for U611MCA | 24d | 2023-04-14 A | 2023-05-15 A | 19 | 100% |  |  |
| 24 |  | HW available with MFI for U625ICA2 | 24d | 2023-04-14 A | 2023-05-15 A |  | 100% |  |  |
| 25 |  | U625MCA 对手件 available | 1d | 2023-06-15 A | 2023-06-15 |  | 50% |  |  |
| 26 |  | Benches available * 4 U625MCA | 40d | 2023-06-16 | 2023-08-10 | 23, 25 |  | 189d |  |
| 27 |  | Vehicle available * 2 U625MCA | 10d | 2023-08-10 | 2023-08-23 |  |  |  |  |
| 28 |  | U625MCA蓝牙和语音调参 | 1d | 2023-11-30 | 2023-11-30 |  |  |  |  |
| 29 |  | U611MCA 蓝牙和语音调参 | 1d | 2023-09-15 | 2023-09-15 |  |  |  |  |
| 30 | 18.12 | **SW development** | 183d? | 2023-03-01 A | 2023-11-15 |  | 16% | 125d |  |
| 31 |  | Customer requirement spec review and release | 15d | 2023-04-14 A | 2023-05-03 A | 19 | 100% |  |  |
| 32 |  | Software requirement spec review and release | 19d | 2023-05-04 A | 2023-05-29 A | 31 | 100% |  |  |
| 33 |  | Test case creation | 20d | 2023-05-31 A | 2023-06-27 A | 32 | 100% |  |  |
| 34 |  | Test case review and release | 5d | 2023-06-28 A | 2023-07-04 | 33 | 75% | 216d |  |
| 35 |  | Carplay UIUE Apple audit | 1d? | 2023-03-01 | 2023-03-01 |  |  |  |  |
| 36 |  | Software module design review and release | 10d | 2023-06-20 | 2023-07-03 |  |  |  |  |
| 37 |  | TARA review | 5d | 2023-06-06 | 2023-06-12 | 32 |  |  |  |
| 38 | 18.12.8 | **30% Basic function migration from CX707** | 183d? | 2023-03-01 A | 2023-11-15 | 23 | 10% | 125d |  |
| 39 |  | 707 BASE FUNCTION COMPLETE | 1d | 2023-06-28 A | 2023-06-28 A |  | 100% |  |  |
| 40 |  | bonjour框架移植适配 | 2d | 2023-07-31 | 2023-08-01 |  |  |  |  |
| 41 |  | CarPlayResourceManger框架开发 | 1d | 2023-07-31 | 2023-07-31 |  |  |  |  |
| 42 |  | CarPlayApp框架开发 | 5d | 2023-07-31 | 2023-08-04 |  |  |  |  |
| 43 |  | 苹果MFI芯片适配: Hal层到framework层的调试 | 5d | 2023-07-31 | 2023-08-04 |  |  |  |  |
| 44 | 18.12.8.6 | **80% function development** | 149d? | 2023-03-01 A | 2023-09-21 |  | 13% | 159d |  |
| 45 |  | 协议栈iap2框架开发 | 3d | 2023-07-31 | 2023-08-02 | 43 |  |  |  |
| 46 |  | 协议栈plugin框架开发 | 3d | 2023-07-31 | 2023-08-02 |  |  |  |  |
| 47 |  | carplay主视频流适配 | 5d | 2023-07-31 | 2023-08-04 |  |  |  |  |
| 48 | 18.12.8.6.4 | **Carplay界面设计/交互设计** | 30d | 2023-07-11 | 2023-08-21 |  |  |  |  |
| 49 |  | carplay弹窗遮盖第三方交互业务 | 20d | 2023-08-07 | 2023-09-01 |  |  | 173d | start no earlier than 2023-08-07 |
| 50 |  | carplay音乐随心听，后排显示 | 20d | 2023-08-07 | 2023-09-01 | 20 |  | 173d | finish no earlier than 2023-09-01 |
| 51 |  | cafplay连接业务 | 20d | 2023-08-07 | 2023-09-01 | 20 |  | 173d | finish no earlier than 2023-09-01 |
| 52 |  | carplay重连业务 | 20d | 2023-08-07 | 2023-09-01 | 20 |  | 173d | finish no earlier than 2023-09-01 |
| 53 |  | carplay电话仪表显示业务 | 20d | 2023-08-07 | 2023-09-01 | 20 |  | 173d | finish no earlier than 2023-09-01 |
| 54 |  | carplay接口业务提供 | 20d | 2023-08-07 | 2023-09-01 | 20 |  | 173d | finish no earlier than 2023-09-01 |
| 55 |  | carplay方控按键需求 | 20d | 2023-08-07 | 2023-09-01 | 20 |  | 173d | finish no earlier than 2023-09-01 |
| 56 |  | carplay兼容13以下手机 | 20d | 2023-08-07 | 2023-09-01 | 20 |  | 173d | finish no earlier than 2023-09-01 |
| 57 | 18.12.8.6.5 | **AudioManager & Audioflinger** | 89d | 2023-05-22 A | 2023-09-21 |  | 6% | 156d |  |
| 58 |  | 提供carplay所有接口文档 | 10d | 2023-05-22 A | 2023-06-02 A | 22 | 100% |  |  |
| 59 |  | 延锋提供软件demo版本 | 1d | 2023-07-26 A | 2023-07-26 A | 39FS+10d | 100% |  |  |
| 60 |  | audio arbitration management update | 11d | 2023-07-27 | 2023-08-10 | 59 |  | 156d |  |
| 61 |  | Audio data control update | 30d | 2023-08-11 | 2023-09-21 | 60 |  | 156d |  |
| 62 |  | Audio对接 | 3d | 2023-09-19 | 2023-09-21 | 61 |  |  |  |
| 63 |  | carplay音频流适配焦点适配 | 36d | 2023-07-24 | 2023-09-11 | 59 |  |  |  |
| 64 |  | aduio对接 创达 开发+联调 | 36d | 2023-07-24 | 2023-09-11 | 59 |  |  |  |
| 65 |  | aduio对接 百度 开发+联调 (需要百度完成开发工作语音指令) | 36d | 2023-07-24 | 2023-09-11 | 59 |  |  |  |
| 66 |  | multi-screen, interaction with cluster | 30d | 2023-06-20 | 2023-07-31 |  |  |  |  |
| 67 | 18.12.8.6.6 | **Enhenced Siri** | 63d? | 2023-06-02 | 2023-08-29 |  |  | 0d |  |
| 68 |  | enhanced Siri MRD release | 10d | 2023-06-02 | 2023-06-15 |  |  |  |  |
| 69 |  | carplay SDK interface list review and release | 5d | 2023-07-31 | 2023-08-04 | 68 |  |  | start no earlier than 2023-07-31 |
| 70 |  | integrate sdk and modeling | 7d | 2023-08-07 | 2023-08-15 | 69 |  |  | start no earlier than 2023-08-07 |

| ID | WBS | Task | Duration | Start | Finish | Predecessors | Complete | Total float | Constraint |
| --- | --- | --- | --- | --- | --- | --- | --- | --- | --- |
| 71 |  | 语音技术部降噪后音频转发链路联调 | 14d? | 2023-07-05 | 2023-07-24 |  |  |  |  |
| 72 |  | SDK接口适配 | 10d? | 2023-07-25 | 2023-08-07 | 71 |  |  |  |
| 73 |  | 延锋的硬按键交互 | 1d? | 2023-08-08 | 2023-08-08 | 72 |  |  |  |
| 74 |  | 与系统功能联调 | 10d? | 2023-08-09 | 2023-08-22 | 73 |  |  |  |
| 75 |  | bugfix | 5d? | 2023-08-23 | 2023-08-29 | 74 |  |  |  |
| 76 |  | 随心听UI/UE开发 | 10d? | 2023-07-05 | 2023-07-18 | 70 |  |  |  |
| 77 |  | 联调 | 10d? | 2023-08-09 | 2023-08-22 | 73, 76 |  |  |  |
| 78 |  | bugfix | 5d? | 2023-08-23 | 2023-08-29 | 77 |  |  |  |
| 79 |  | 地图功能开发适配 | 10d? | 2023-07-05 | 2023-07-18 | 70 |  |  |  |
| 80 |  | 联调 | 10d? | 2023-08-09 | 2023-08-22 | 79, 73 |  |  |  |
| 81 |  | bugfix | 5d? | 2023-08-23 | 2023-08-29 | 80 |  |  |  |
| 82 |  | local navigation & Carplay navigation arbitration | 10d | 2023-06-20 | 2023-07-03 |  |  |  |  |
| 83 |  | enhancesiri适配，互斥交互业务 | 2d | 2023-07-04 | 2023-07-05 | 82 |  |  |  |
| 84 | 18.12.8.6.7 | **Location** | 59d | 2023-03-01 A | 2023-05-18 A |  | 100% |  |  |
| 85 |  | 提供Location的提供接口和说明文档 | 38d | 2023-03-01 A | 2023-04-21 A |  | 100% |  |  |
| 86 |  | 验证接口和说明文档 | 4d | 2023-04-23 A | 2023-04-26 A | 85 | 100% |  |  |
| 87 |  | location nema格式位置上报 | 17d | 2023-04-27 A | 2023-05-18 A | 86 | 100% |  |  |
| 88 | 18.12.8.7 | **ECNR 开发** | 94d | 2023-06-30 | 2023-11-15 |  |  | 0d |  |
| 89 |  | U625 Enhance Siri 语料录制 | 19d | 2023-06-30 | 2023-07-26 |  |  |  |  |
| 90 |  | U625 语料质检和标注 | 5d | 2023-07-27 | 2023-08-02 | 89 |  | 106d |  |
| 91 |  | ECNR for enhanced Siri of U625MCA | 35d | 2023-08-03 | 2023-09-20 | 90 |  |  |  |
| 92 |  | ECNR calibration for Siri and BT, face time… for U625MCA | 10d | 2023-08-30 | 2023-09-12 | 27 |  |  |  |
| 93 |  | performance tuning | 20d | 2023-08-30 | 2023-09-26 | 27 |  |  |  |
| 94 |  | U611 Enhance Siri 语料录制 | 19d | 2023-07-26 | 2023-08-21 |  |  |  |  |
| 95 |  | U611 语料质检和标注 | 5d | 2023-08-22 | 2023-08-28 | 94 |  |  |  |
| 96 |  | ECNR for enahnced Siri of U611MCA | 33d | 2023-09-25 | 2023-11-15 |  |  | 125d | start no earlier than 2023-09-25 |
| 97 |  | ECNR calibration for Siri and BT, face time… for U611MCA | 10d | 2023-09-13 | 2023-09-26 | 92 |  | 156d |  |
| 98 | 18.13 | **CarPlay certification** | 264d | 2023-03-28 A | 2024-04-16 |  | 29% | 25d |  |
| 99 |  | Prepare and submit product plan | 4d | 2023-03-28 A | 2023-03-31 A |  | 100% |  | start no earlier than 2023-03-28 |
| 100 |  | Prepare and Submit CarPlay Configuration record | 5d | 2023-04-03 A | 2023-04-07 A | 99 | 100% |  | start no earlier than 2023-04-03 |
| 101 |  | Apple audit product & configuration files | 11d | 2023-04-10 A | 2023-04-23 A | 100 | 100% |  | start no earlier than 2023-04-10 |
| 102 |  | Refine carplay audit files | 10d | 2023-04-24 A | 2023-05-05 A | 101 | 100% |  |  |
| 103 |  | App re-audit product & configuration file | 20d | 2023-05-06 A | 2023-06-01 A | 102 | 100% |  |  |
| 104 |  | Prepare and Submit Intergration design- User Experience review | 20d | 2023-06-02 A | 2023-06-29 A | 103 | 100% |  | finish no earlier than 2021-12-31 |
| 105 |  | Submit Integration design/Graphics review | 20d | 2023-11-20 | 2023-12-15 | 109 |  | 103d |  |
| 106 | 18.13.8 | **Carplay bench test (2 pre-test + 2 test) FACETS** | 123d | 2023-09-11 | 2024-03-19 |  |  | 45d |  |
| 107 |  | 1st round of pre-test | 15d | 2023-09-11 | 2023-09-29 | 151FS+2d |  | 79d | start no earlier than 2023-09-04 |
| 108 |  | debug | 20d | 2023-09-20 | 2023-10-24 | 107SS+7d |  | 79d | finish no earlier than 2022-03-19 |
| 109 |  | 2nd round of pre-test | 15d | 2023-10-30 | 2023-11-17 | 108FS+3d |  | 79d |  |
| 110 |  | debug | 20d | 2023-11-06 | 2023-12-01 | 109SS+5d |  | 79d |  |
| 111 |  | software integration and release | 5d | 2023-12-04 | 2023-12-08 | 110 |  | 79d |  |
| 112 |  | prepare and submit self-test report | 5d | 2023-12-11 | 2023-12-15 | 111 |  | 79d |  |
| 113 |  | 苹果审核自测报告 | 6d | 2023-12-18 | 2023-12-25 | 112 |  | 79d |  |
| 114 |  | 1st round of Test | 15d | 2023-12-29 | 2024-01-23 | 113FS+3d |  | 79d | finish no earlier than 2022-05-25 |
| 115 |  | debug | 15d | 2024-01-10 | 2024-01-30 | 114SS+5d |  | 63d | finish no earlier than 2022-06-13 |
| 116 |  | review and release self-test report | 5d | 2024-01-31 | 2024-02-06 | 115 |  | 63d |  |
| 117 |  | 苹果审核自测报告 | 6d | 2024-02-07 | 2024-02-22 | 116 |  | 63d | start no earlier than 2022-07-29 |
| 118 |  | 2nd round of Test | 15d | 2024-02-28 | 2024-03-19 |  |  | 0d | start no earlier than 2024-02-28 |
| 119 | 18.13.9 | **ITU-T&Siri&Enhanced Siri** | 171d | 2023-04-22 A | 2023-12-21 |  | 31% | 99d |  |
| 120 |  | 客户提供实车至实验室(Siri) | 1d | 2023-12-04 | 2023-12-04 |  |  |  |  |
| 121 |  | SSOW 与供应商 确认 | 20d | 2023-04-22 A | 2023-05-16 A |  | 100% |  |  |
| 122 |  | PR release | 23d | 2023-05-17 A | 2023-06-16 A | 121 | 100% |  | finish no earlier than 2023-06-16 |
| 123 |  | APQM | 25d | 2023-07-10 | 2023-08-11 |  |  |  |  |
| 124 |  | Cerence ITU-T&Siri test | 30d | 2023-10-09 | 2023-11-17 | 101, 27, 91, 92, 28FS+5d |  |  | start no earlier than 2023-10-09 |
| 125 |  | Submit ITU-T | 15d | 2023-11-20 | 2023-12-08 | 124 |  | 108d |  |
| 126 |  | Enhanced Siri test实验室预约 | 15d | 2023-05-15 | 2023-06-02 |  |  |  |  |
| 127 |  | 客户提供实车至实验室(Enhance Siri ) | 1d | 2023-10-23 | 2023-10-23 |  |  |  |  |
| 128 |  | Enhanced Siri test and Submit ITU-T(U625 ) | 50d | 2023-09-28 | 2023-12-13 | 91FS+5d |  | 81d | start no earlier than 2022-07-19 |
| 129 |  | U625高中低配ECNR 主观tunning | 12d | 2023-11-20 | 2023-12-05 | 124, 128 |  | 99d |  |
| 130 |  | U611高中低配ECNR 主观tunning | 12d | 2023-12-06 | 2023-12-21 | 129 |  | 99d |  |
| 131 | 18.13.10 | **Carplay road test - GNSS/DR/Navigation** | 85d | 2023-08-24 | 2023-12-27 |  |  | 85d |  |
| 132 |  | 1st round pre-test | 10d | 2023-08-24 | 2023-09-06 | 27, 82 |  | 85d |  |
| 133 |  | debug | 7d | 2023-09-07 | 2023-09-15 | 132 |  | 85d | finish no earlier than 2022-03-11 |
| 134 |  | 2nd round pre-test | 8d | 2023-09-18 | 2023-09-27 | 133 |  | 85d | start no earlier than 2022-03-22 |
| 135 |  | debug | 7d | 2023-09-28 | 2023-10-13 | 134 |  | 85d | finish no earlier than 2022-04-28 |
| 136 |  | 1st round of official test | 10d | 2023-10-16 | 2023-10-27 | 135 |  | 108d | finish no earlier than 2021-12-20 |
| 137 |  | debug | 10d | 2023-10-30 | 2023-11-10 | 136 |  | 108d | start no earlier than 2022-07-11 |
| 138 |  | software integration and self-test | 3d | 2023-11-27 | 2023-11-29 | 137FS+10d |  | 115d |  |
| 139 |  | 2nd round test and Complete wireless drive audit/Complete location drive audit) | 10d | 2023-12-14 | 2023-12-27 | 137, 145, 147FS+10d |  | 85d | finish no earlier than 2022-01-10 |
| 140 | 18.13.11 | **CarPlay performance test** | 102d | 2023-08-15 | 2024-01-15 |  |  | 85d |  |

| ID | WBS | Task | Duration | Start | Finish | Predecessors | Total float | Constraint |
| --- | --- | --- | --- | --- | --- | --- | --- | --- |
| 141 |  | 1st round pre-test | 10d | 2023-08-15 | 2023-08-28 |  | 90d | start no earlier than 2023-08-15 |
| 142 |  | debug | 7d | 2023-08-29 | 2023-09-06 | 141 | 90d | finish no earlier than 2022-03-04 |
| 143 |  | 2nd round pre-test | 10d | 2023-09-07 | 2023-09-20 | 142 | 90d | start no earlier than 2022-03-21 |
| 144 |  | debug | 7d | 2023-09-21 | 2023-09-29 | 143 | 90d | finish no earlier than 2022-04-15 |
| 145 |  | 1st round of official test | 10d | 2023-10-16 | 2023-10-27 | 144, 135 | 85d |  |
| 146 |  | debug | 10d | 2023-10-30 | 2023-11-10 | 145 | 85d | start no earlier than 2022-07-06 |
| 147 |  | software integration and self-test | 3d | 2023-11-27 | 2023-11-29 | 146FS+10d | 85d |  |
| 148 |  | 2nd round test and Complete wireless performace audit | 10d | 2023-12-28 | 2024-01-15 | 139 | 85d |  |
| 149 |  | 苹果最终认证结果 | 20d | 2024-03-20 | 2024-04-16 | 118 |  |  |
| 150 | 18.14 | **版本释放** | 175d | 2023-08-31 | 2024-05-22 |  | 0d |  |
| 151 |  | 1st 软件 | 5d | 2023-08-31 | 2023-09-06 |  |  |  |
| 152 |  | 2nd 软件 | 5d | 2023-10-23 | 2023-10-27 |  |  |  |
| 153 |  | 3rd 软件 | 20d | 2023-11-30 | 2023-12-27 |  |  |  |
| 154 |  | 4th 软件 | 20d | 2024-01-22 | 2024-02-26 |  |  |  |
| 155 |  | 5th 软件 | 5d | 2023-11-27 | 2023-12-01 |  |  |  |
| 156 |  | U611 and U625 carplay SW release | 25d | 2024-04-17 | 2024-05-22 | 149 | 0d |  |

## Version 2 (data date 2023-03-27, saved 2023-08-04, file SYNC+3.0 U6xx_carplay plan_ 20230804.mpp)

Last finish stays 2024-05-22. Complete tasks 23 → 34.

Removed: 36 Software module design review and release; 123 APQM

Changed:

| ID | Task | Start | Finish | Duration | Complete | Total float | Predecessors | Other |
| --- | --- | --- | --- | --- | --- | --- | --- | --- |
| 2 | DCV | 2023-02-08 A | 2023-02-08 A |  | 0% → 100% |  |  |  |
| 3 | PEC | 2023-08-11 A | 2023-08-11 A | 1d? → 1d | 0% → 100% |  |  |  |
| 18 | **SYNC+ 3.0(U6xx)** |  |  |  | 24% → 27% |  |  |  |
| 25 | U625MCA 对手件 available |  | 2023-06-15 A |  | 50% → 100% |  |  |  |
| 26 | Benches available * 4 U625MCA | 2023-06-16 A |  |  | 0% → 25% |  |  |  |
| 30 | **SW development** |  |  |  | 16% → 20% |  |  |  |
| 34 | Test case review and release |  | 2023-07-04 A |  | 75% → 100% | 216d → none |  |  |
| 35 | Carplay UIUE Apple audit | 2023-03-01 → 2023-07-14 A (+135d) | 2023-03-01 → 2023-07-14 A (+135d) | 1d? → 1d | 0% → 100% |  |  |  |
| 37 | **30% Basic function migration from CX707** |  |  |  | 10% → 13% |  |  |  |
| 39 | bonjour框架移植适配 | 2023-07-31 A | 2023-08-01 A |  | 0% → 100% |  |  |  |
| 40 | CarPlayResourceManger框架开发 | 2023-07-31 A | 2023-07-31 A |  | 0% → 100% |  |  |  |
| 41 | CarPlayApp框架开发 | 2023-07-31 A | 2023-08-04 A |  | 0% → 100% |  |  |  |
| 42 | 苹果MFI芯片适配: Hal层到framework层的调试 | 2023-07-31 A | 2023-08-04 A |  | 0% → 100% |  |  |  |
| 43 | **80% function development** |  |  |  | 13% → 15% |  |  |  |
| 44 | 协议栈iap2框架开发 | 2023-07-31 A | 2023-08-02 A |  | 0% → 100% |  |  |  |
| 45 | 协议栈plugin框架开发 | 2023-07-31 A | 2023-08-02 A |  | 0% → 100% |  |  |  |
| 46 | carplay主视频流适配 | 2023-07-31 A |  |  | 0% → 75% |  |  |  |
| 97 | **CarPlay certification** |  |  |  | 29% → 31% |  |  |  |
| 104 | Submit Integration design/Graphics review | 2023-11-20 → 2023-09-11 (-70d) | 2023-12-15 → 2023-10-13 (-63d) |  |  | 103d → 148d | 108 → none | constraint none → start no earlier than 2023-09-11 |
| 118 | **ITU-T&Siri&Enhanced Siri** |  | 2023-12-21 → 2024-02-28 (+69d) | 171d → 211d | 31% → 38% | 99d → 59d |  |  |
| 122 | Cerence ITU-T&Siri test | 2023-10-09 → 2023-12-04 (+56d) | 2023-11-17 → 2024-01-17 (+61d) |  |  |  |  | constraint start no earlier than 2023-10-09 → start no earlier than 2023-12-04 |
| 123 | Submit ITU-T | 2023-11-20 → 2024-01-18 (+59d) | 2023-12-08 → 2024-02-07 (+61d) |  |  | 108d → 68d |  |  |
| 127 | U625高中低配ECNR 主观tunning | 2023-11-20 → 2024-01-18 (+59d) | 2023-12-05 → 2024-02-02 (+59d) |  |  | 99d → 59d |  |  |
| 128 | U611高中低配ECNR 主观tunning | 2023-12-06 → 2024-02-05 (+61d) | 2023-12-21 → 2024-02-28 (+69d) |  |  | 99d → 59d |  |  |

## Version 3 (data date 2023-03-27, saved 2023-08-22, file SYNC+3.0 U6xx_carplay plan_ 202308021.mpp)

Last finish stays 2024-05-22. Complete tasks 34 → 49.

Added:

| ID | Task | Duration | Start | Finish | Predecessors | Constraint |
| --- | --- | --- | --- | --- | --- | --- |
| 66 | **多屏互动 电话显示** | 13d | 2023-08-14 A | 2023-08-30 |  |  |
| 67 | 接口调用逻辑编码 | 7d | 2023-08-14 A | 2023-08-22 A |  | start no earlier than 2023-08-14 |
| 68 | 功能自测bug修复 | 6d | 2023-08-23 | 2023-08-30 | 67 |  |
| 69 | **Carplay导航** | 9d | 2023-08-16 A | 2023-08-28 |  |  |
| 70 | 接口调用逻辑编码 | 6d | 2023-08-16 A | 2023-08-23 |  |  |
| 71 | bug修复 | 3d | 2023-08-24 | 2023-08-28 | 70 |  |

Removed: 124 Enhanced Siri test实验室预约; 125 客户提供实车至实验室(Enhance Siri ); 126 Enhanced Siri test and Submit ITU-T(U625 ); 133 debug; 135 debug; 136 software integration and self-test; 137 2nd round test and Complete wireless drive audit/Complete location drive audit); 138 CarPlay performance test; 139 1st round pre-test; 140 debug; 141 2nd round pre-test; 142 debug; 143 1st round of official test; 144 debug; 145 software integration and self-test; 146 2nd round test and Complete wireless performace audit

Changed:

| ID | Task | Start | Finish | Duration | Complete | Total float | Predecessors | Other |
| --- | --- | --- | --- | --- | --- | --- | --- | --- |
| 18 | **SYNC+ 3.0(U6xx)** | 2023-03-01 A → 2021-12-16 A (-440d) |  | 308d? → 622d? | 27% → 46% |  |  |  |
| 26 | Benches available * 4 U625MCA |  |  |  | 25% → 75% |  |  |  |
| 30 | **SW development** |  | 2023-11-15 → 2023-12-26 (+41d) | 183d? → 212d? | 20% → 52% | 125d → 96d |  |  |
| 37 | **30% Basic function migration from CX707** |  | 2023-11-15 → 2023-12-26 (+41d) | 183d? → 212d? | 13% → 48% | 125d → 96d |  |  |
| 43 | **80% function development** |  |  |  | 15% → 61% |  |  |  |
| 46 | carplay主视频流适配 |  | 2023-08-04 → 2023-08-11 A (+7d) | 5d → 10d | 75% → 100% |  |  |  |
| 47 | **Carplay界面设计/交互设计** |  |  |  | 0% → 50% |  |  |  |
| 48 | carplay弹窗遮盖第三方交互业务 | 2023-08-07 A |  |  | 0% → 50% |  |  |  |
| 49 | carplay音乐随心听，后排显示 | 2023-08-07 A |  |  | 0% → 50% |  |  |  |
| 50 | cafplay连接业务 | 2023-08-07 A |  |  | 0% → 50% |  |  |  |
| 51 | carplay重连业务 | 2023-08-07 A |  |  | 0% → 50% |  |  |  |
| 52 | carplay电话仪表显示业务 | 2023-08-07 A |  |  | 0% → 50% |  |  |  |
| 53 | carplay接口业务提供 | 2023-08-07 A |  |  | 0% → 50% |  |  |  |
| 54 | carplay方控按键需求 | 2023-08-07 A |  |  | 0% → 50% |  |  |  |
| 55 | carplay兼容13以下手机 | 2023-08-07 A |  |  | 0% → 50% |  |  |  |
| 56 | **AudioManager & Audioflinger** |  |  | 89d → 89d? | 6% → 76% | 156d → 0d |  |  |
| 59 | audio arbitration management update | 2023-07-27 A | 2023-08-10 A |  | 0% → 100% | 156d → none |  |  |
| 60 | Audio data control update | 2023-08-11 A | 2023-09-21 A |  | 0% → 100% | 156d → none |  |  |
| 61 | Audio对接 | 2023-09-19 A | 2023-09-21 A |  | 0% → 100% |  |  |  |
| 62 | carplay音频流适配焦点适配 | 2023-07-24 A | 2023-09-11 → 2023-09-01 A (-10d) | 36d → 30d | 0% → 100% |  |  |  |
| 63 | aduio对接 创达 开发+联调 | 2023-07-24 A | 2023-09-11 → 2023-09-01 (-10d) | 36d → 30d | 0% → 50% |  |  |  |
| 64 | aduio对接 百度 开发+联调 (需要百度完成开发工作语音指令) | 2023-07-24 A | 2023-09-11 → 2023-09-01 (-10d) | 36d → 30d | 0% → 50% |  |  |  |
| 65 | **multi-screen, interaction with cluster** |  |  | 30d → 30d? | 0% → 52% |  |  |  |
| 72 | **Enhenced Siri** | 2023-06-02 A | 2023-08-29 → 2023-09-01 (+3d) | 63d? → 66d? | 0% → 34% |  |  |  |
| 73 | enhanced Siri MRD release | 2023-06-02 A | 2023-06-15 A |  | 0% → 100% |  |  |  |
| 74 | carplay SDK interface list review and release | 2023-07-31 A | 2023-08-04 A |  | 0% → 100% |  |  |  |
| 81 | 随心听UI/UE开发 | 2023-07-05 A | 2023-07-18 A | 10d? → 10d | 0% → 100% |  |  |  |
| 82 | 联调 | 2023-08-09 → 2023-08-22 (+13d) | 2023-08-22 → 2023-09-01 (+10d) | 10d? → 9d |  |  |  |  |
| 83 | bugfix |  | 2023-08-29 → 2023-09-01 (+3d) | 5d? → 8d |  |  |  |  |
| 84 | 地图功能开发适配 | 2023-07-05 A | 2023-07-18 A | 10d? → 10d | 0% → 100% |  |  |  |
| 85 | 联调 |  | 2023-08-22 → 2023-09-01 (+10d) | 10d? → 18d |  |  |  |  |
| 86 | bugfix |  | 2023-08-29 → 2023-09-01 (+3d) | 5d? → 8d |  |  |  |  |
| 87 | local navigation & Carplay navigation arbitration | 2023-06-20 A | 2023-07-03 A |  | 0% → 100% |  |  |  |
| 88 | enhancesiri适配，互斥交互业务 | 2023-07-04 A | 2023-07-05 A |  | 0% → 100% |  |  |  |
| 93 | **ECNR 开发** | 2023-06-30 A | 2023-11-15 → 2023-12-26 (+41d) | 94d → 123d | 0% → 15% | 0d → 96d |  |  |
| 94 | U625 Enhance Siri 语料录制 | 2023-06-30 A | 2023-07-26 A |  | 0% → 100% |  |  |  |
| 95 | U625 语料质检和标注 | 2023-07-27 → 2023-08-21 (+25d) | 2023-08-02 → 2023-08-25 (+23d) |  |  | 106d → 58d | 94 → none | constraint none → start no earlier than 2023-08-21 |
| 96 | ECNR for enhanced Siri of U625MCA | 2023-08-03 → 2023-08-28 (+25d) | 2023-09-20 → 2023-12-04 (+75d) | 35d → 66d |  |  |  |  |
| 99 | U611 Enhance Siri 语料录制 | 2023-07-26 A | 2023-08-21 → 2023-08-04 A (-17d) | 19d → 8d | 0% → 100% |  |  |  |
| 100 | U611 语料质检和标注 | 2023-08-22 → 2023-08-07 A (-15d) | 2023-08-28 → 2023-08-16 A (-12d) | 5d → 8d | 0% → 100% |  |  |  |
| 101 | ECNR for enahnced Siri of U611MCA | 2023-09-25 → 2023-08-16 (-40d) | 2023-11-15 → 2023-12-26 (+41d) | 33d → 90d |  | 125d → 96d |  | constraint start no earlier than 2023-09-25 → start no earlier than 2023-08-16 |
| 103 | **CarPlay certification** | 2023-03-28 A → 2021-12-16 A (-467d) |  | 264d → 597d | 31% → 30% |  |  |  |
| 130 | U625高中低配ECNR 主观tunning |  |  |  |  |  | 128, Enhanced Siri test and Submit ITU-T(U625 ) → 128 |  |
| 132 | **Carplay road test and performance test** | 2023-08-24 → 2021-12-16 (-616d) | 2023-12-27 → 2023-12-01 (-26d) | 85d → 509d |  | 85d → 113d |  | was named Carplay road test - GNSS/DR/Navigation |
| 133 | 1st test | 2023-08-24 → 2023-11-13 (+81d) | 2023-09-06 → 2023-11-17 (+72d) | 10d → 5d |  | 85d → 113d |  | was named 1st round pre-test; constraint none → start no earlier than 2023-11-13 |
| 134 | debug | 2023-09-07 → 2023-11-20 (+74d) | 2023-09-15 → 2023-11-24 (+70d) | 7d → 5d |  | 85d → 113d |  |  |
| 135 | 2nd test | 2023-09-18 → 2023-11-27 (+70d) | 2023-09-27 → 2023-12-01 (+65d) | 8d → 5d |  | 85d → 113d |  | was named 2nd round pre-test |
| 136 | report | 2023-10-16 → 2021-12-16 (-669d) | 2023-10-27 → 2021-12-20 (-676d) | 10d → 3d |  | 108d → 619d | debug → none | was named 1st round of official test |

## Version 4 (data date 2023-03-27, saved 2023-08-30, file SYNC+3.0 U6xx_carplay plan_ 20230829.mpp)

Last finish stays 2024-05-22. Complete tasks 49 → 56.

Added:

| ID | Task | Duration | Start | Finish | Constraint |
| --- | --- | --- | --- | --- | --- |
| 66 | media 仪表同步多媒体信息 | 12d | 2023-08-14 A | 2023-08-29 A | finish no earlier than 2023-08-30 |
| 149 | 软件自测 | 4d | 2023-08-28 | 2023-08-31 |  |
| 150 | DID 配置入口 | 1d | 2023-08-28 A | 2023-08-28 A |  |
| 151 | carplay 同步到 master 分支 | 1d | 2023-09-01 | 2023-09-01 |  |
| 152 | 集成测试(DISABLE 基本功能测试+carplay 测试) | 10d | 2023-09-04 | 2023-09-15 |  |
| 154 | carplay 同步到 master 分支（YF改动点 audio HAL ,BT） | 1d? | 2021-03-31 | 2021-03-31 |  |
| 155 | carplay 功能测试 | 1d? | 2021-03-31 | 2021-03-31 |  |

Changed:

| ID | Task | Start | Finish | Duration | Complete | Total float | Predecessors |
| --- | --- | --- | --- | --- | --- | --- | --- |
| 18 | **SYNC+ 3.0(U6xx)** | 2021-12-16 A → 2023-03-01 A (+440d) |  | 622d? → 308d? | 46% → 49% |  |  |
| 30 | **SW development** |  |  |  | 52% → 57% |  |  |
| 37 | **30% Basic function migration from CX707** |  |  |  | 48% → 54% |  |  |
| 43 | **80% function development** |  |  |  | 61% → 68% |  |  |
| 56 | **AudioManager & Audioflinger** |  |  |  | 76% → 78% |  |  |
| 65 | **multi-screen, interaction with cluster** |  |  |  | 52% → 74% |  |  |
| 70 | **Carplay导航** |  |  |  | 50% → 67% |  |  |
| 71 | 接口调用逻辑编码 |  | 2023-08-23 A |  | 75% → 100% |  |  |
| 73 | **Enhenced Siri** |  | 2023-09-01 → 2023-09-05 (+4d) | 66d? → 68d? | 34% → 61% |  |  |
| 76 | integrate sdk and modeling | 2023-08-07 A | 2023-08-15 A |  | 0% → 100% |  |  |
| 77 | 语音技术部降噪后音频转发链路联调 | 2023-07-05 A | 2023-07-24 → 2023-08-22 A (+29d) | 14d? → 35d | 0% → 100% |  |  |
| 78 | SDK接口适配 | 2023-07-25 A | 2023-08-07 A | 10d? → 10d | 0% → 100% |  |  |
| 79 | 延锋的硬按键交互 | 2023-08-08 A | 2023-08-08 A | 1d? → 1d | 0% → 100% |  |  |
| 80 | 与系统功能联调 | 2023-08-09 → 2023-08-23 (+14d) | 2023-08-22 → 2023-09-05 (+14d) |  |  |  |  |
| 81 | bugfix |  | 2023-08-29 → 2023-09-05 (+7d) | 5d? → 10d |  |  | 80 → none |
| 97 | ECNR for enhanced Siri of U625MCA |  | 2023-12-04 → 2023-12-26 (+22d) | 66d → 82d |  |  |  |
| 102 | ECNR for enahnced Siri of U611MCA |  | 2023-12-26 → 2023-12-04 (-22d) | 90d → 74d |  | 96d → 112d |  |
| 104 | **CarPlay certification** | 2021-12-16 A → 2023-03-28 A (+467d) |  | 597d → 264d |  |  |  |
| 133 | **Carplay road test and performance test** | 2021-12-16 → 2023-11-13 (+697d) | 2023-12-01 → 2023-12-06 (+5d) | 509d → 18d |  | 113d → 110d |  |
| 137 | report | 2021-12-16 → 2023-12-04 (+718d) | 2021-12-20 → 2023-12-06 (+716d) |  |  | 619d → 110d | none → 136 |

## Version 5 (data date 2023-03-27, saved 2023-10-12, file SYNC+3.0 U6xx_carplay plan_ 20231007.mpp)

Last finish stays 2024-05-22. Complete tasks 56 → 85.

Changed:

| ID | Task | Start | Finish | Duration | Complete | Total float | Predecessors | Other |
| --- | --- | --- | --- | --- | --- | --- | --- | --- |
| 18 | **SYNC+ 3.0(U6xx)** |  |  |  | 49% → 72% |  |  |  |
| 26 | Benches available * 4 U625MCA |  | 2023-08-10 A |  | 75% → 100% | 189d → none |  |  |
| 30 | **SW development** |  |  |  | 57% → 91% |  |  |  |
| 37 | **30% Basic function migration from CX707** |  |  |  | 54% → 91% |  |  |  |
| 43 | **80% function development** |  |  |  | 68% → 99% | 159d → 0d |  |  |
| 47 | **Carplay界面设计/交互设计** |  |  |  | 50% → 100% |  |  |  |
| 48 | carplay弹窗遮盖第三方交互业务 |  | 2023-09-01 A |  | 50% → 100% | 173d → none |  |  |
| 49 | carplay音乐随心听，后排显示 |  | 2023-09-01 A |  | 50% → 100% | 173d → none |  |  |
| 50 | cafplay连接业务 |  | 2023-09-01 A |  | 50% → 100% | 173d → none |  |  |
| 51 | carplay重连业务 |  | 2023-09-01 A |  | 50% → 100% | 173d → none |  |  |
| 52 | carplay电话仪表显示业务 |  | 2023-09-01 A |  | 50% → 100% | 173d → none |  |  |
| 53 | carplay接口业务提供 |  | 2023-09-01 A |  | 50% → 100% | 173d → none |  |  |
| 54 | carplay方控按键需求 |  | 2023-09-01 A |  | 50% → 100% | 173d → none |  |  |
| 55 | carplay兼容13以下手机 |  | 2023-09-01 A |  | 50% → 100% | 173d → none |  |  |
| 56 | **AudioManager & Audioflinger** |  |  |  | 78% → 99% |  |  |  |
| 63 | aduio对接 创达 开发+联调 |  | 2023-09-01 A |  | 50% → 100% |  |  |  |
| 64 | aduio对接 百度 开发+联调 (需要百度完成开发工作语音指令) |  | 2023-09-01 A |  | 50% → 100% |  |  |  |
| 65 | **multi-screen, interaction with cluster** |  |  |  | 74% → 99% |  |  |  |
| 67 | **多屏互动 电话显示** |  | 2023-08-30 A |  | 54% → 100% | 0d → none |  |  |
| 69 | 功能自测bug修复 | 2023-08-23 A | 2023-08-30 A |  | 0% → 100% |  |  |  |
| 70 | **Carplay导航** |  | 2023-08-28 A |  | 67% → 100% | 0d → none |  |  |
| 72 | bug修复 | 2023-08-24 A | 2023-08-28 A |  | 0% → 100% |  |  |  |
| 73 | **Enhenced Siri** |  |  | 68d? → 68d | 61% → 99% |  |  |  |
| 80 | 与系统功能联调 | 2023-08-23 A | 2023-09-05 A | 10d? → 10d | 0% → 100% |  |  |  |
| 81 | bugfix | 2023-08-23 A | 2023-09-05 A |  | 0% → 100% |  |  |  |
| 83 | 联调 | 2023-08-22 A | 2023-09-01 A |  | 0% → 100% |  |  |  |
| 84 | bugfix | 2023-08-23 A | 2023-09-01 A |  | 0% → 100% |  |  |  |
| 86 | 联调 | 2023-08-09 A | 2023-09-01 A |  | 0% → 100% |  |  |  |
| 87 | bugfix | 2023-08-23 A | 2023-09-01 A |  | 0% → 100% |  |  |  |
| 94 | **ECNR 开发** |  |  |  | 15% → 67% |  |  |  |
| 96 | U625 语料质检和标注 | 2023-08-21 A | 2023-08-25 A |  | 0% → 100% | 42d → none |  |  |
| 97 | ECNR for enhanced Siri of U625MCA | 2023-08-28 A |  |  | 0% → 50% |  |  |  |
| 98 | ECNR calibration for Siri and BT, face time… for U625MCA | 2023-08-30 A | 2023-09-12 A |  | 0% → 100% |  |  |  |
| 99 | performance tuning | 2023-08-30 A | 2023-09-26 A |  | 0% → 100% |  |  |  |
| 102 | ECNR for enahnced Siri of U611MCA | 2023-08-16 A |  |  | 0% → 50% |  |  |  |
| 103 | ECNR calibration for Siri and BT, face time… for U611MCA | 2023-09-13 A | 2023-09-26 A |  | 0% → 100% | 156d → none |  |  |
| 104 | **CarPlay certification** |  |  |  | 30% → 32% |  |  |  |
| 112 | **Carplay bench test (2 pre-test + 2 test) FACETS** | 2023-09-11 → 2023-10-25 A (+44d) | 2024-03-19 → 2024-03-27 (+8d) | 123d → 102d | 0% → 3% | 45d → 39d |  |  |
| 113 | 1st round of pre-test | 2023-09-11 → 2023-10-25 A (+44d) | 2023-09-29 → 2023-11-14 (+46d) |  | 0% → 25% | 79d → 126d |  |  |
| 114 | debug | 2023-09-20 → 2023-11-07 (+48d) | 2023-10-24 → 2023-11-27 (+34d) | 20d → 15d |  | 79d → 70d |  | constraint finish no earlier than 2022-03-19 → start no earlier than 2023-11-07 |
| 115 | 2nd round of pre-test | 2023-10-30 → 2023-12-01 (+32d) | 2023-11-17 → 2023-12-21 (+34d) |  |  | 79d → 70d |  |  |
| 116 | debug | 2023-11-06 → 2023-12-08 (+32d) | 2023-12-01 → 2023-12-28 (+27d) | 20d → 15d |  | 79d → 91d |  |  |
| 117 | software integration and release | 2023-12-04 → 2023-12-29 (+25d) | 2023-12-08 → 2024-01-05 (+28d) | 5d → 3d |  | 79d → 91d |  |  |
| 118 | prepare and submit self-test report | 2023-12-11 → 2023-12-22 (+11d) | 2023-12-15 → 2023-12-28 (+13d) |  |  | 79d → 70d | 117 → 115 |  |
| 119 | 苹果审核自测报告 | 2023-12-18 → 2023-12-29 (+11d) | 2023-12-25 → 2024-01-10 (+16d) |  |  | 79d → 70d |  |  |
| 120 | 1st round of Test | 2023-12-29 → 2024-01-16 (+18d) | 2024-01-23 → 2024-02-05 (+13d) |  |  | 79d → 70d |  |  |
| 121 | debug | 2024-01-10 → 2024-01-23 (+13d) | 2024-01-30 → 2024-02-20 (+21d) |  |  | 63d → 0d |  |  |
| 122 | review and release self-test report | 2024-01-31 → 2024-02-21 (+21d) | 2024-02-06 → 2024-02-27 (+21d) |  |  | 63d → 0d |  |  |
| 123 | 苹果审核自测报告 | 2024-02-07 → 2024-02-28 (+21d) | 2024-02-22 → 2024-03-06 (+13d) |  |  | 63d → 0d |  |  |
| 124 | 2nd round of Test | 2024-02-28 → 2024-03-07 (+8d) | 2024-03-19 → 2024-03-27 (+8d) |  |  |  | none → 123 |  |
| 138 | 苹果最终认证结果 | 2024-03-20 → 2024-03-28 (+8d) |  | 20d → 14d |  | none → 0d |  |  |
| 139 | **版本释放** | 2023-08-31 A |  |  | 0% → 6% |  |  |  |
| 140 | 1st 软件 | 2023-08-31 A | 2023-09-06 A |  | 0% → 100% |  |  |  |
| 149 | 软件自测 | 2023-08-28 A | 2023-08-31 A |  | 0% → 100% |  |  |  |
| 151 | carplay 同步到 master 分支 | 2023-09-01 A | 2023-09-01 A |  | 0% → 100% |  |  |  |
| 152 | 集成测试(DISABLE 基本功能测试+carplay 测试) | 2023-09-04 A | 2023-09-15 A |  | 0% → 100% |  |  |  |
| 154 | carplay 同步到 master 分支（YF改动点 audio HAL ,BT） | 2021-03-31 → 2023-09-08 A (+891d) | 2021-03-31 → 2023-09-08 A (+891d) | 1d? → 1d | 0% → 100% |  |  |  |
| 155 | carplay 功能测试 | 2021-03-31 → 2023-09-11 A (+894d) | 2021-03-31 → 2023-09-22 A (+905d) | 1d? → 10d | 0% → 100% |  |  |  |

## Version 6 (data date 2023-03-27, saved 2023-11-07, file SYNC+3.0 U6xx_carplay plan_ 20231106.mpp)

Last finish stays 2024-05-22. Complete tasks 85 → 80.

Added:

| ID | Task | Duration | Start | Finish |
| --- | --- | --- | --- | --- |
| 146 | **功能测试** | 121d? | 2023-11-01 A | 2024-04-30 |
| 147 | U625 1st carplay test | 11d | 2023-11-01 A | 2023-11-15 |
| 148 | U611 1st carplay test | 8d | 2023-11-24 | 2023-12-05 |
| 149 | U625 2nd carplay test | 7d | 2023-12-21 | 2023-12-29 |
| 150 | U611 2nd carplay test | 1d? | 2023-11-01 | 2023-11-01 |
| 151 | U625 3rd carplay test | 1d? | 2023-11-01 | 2023-11-01 |
| 152 | U625 FO check point | 10d | 2023-12-18 | 2023-12-29 |
| 153 | U625 REC full funtion test | 25d | 2024-01-15 | 2024-02-26 |
| 154 | U625 VOCF/NTT | 51d | 2024-02-20 | 2024-04-30 |
| 155 | U611 FO check point | 5d | 2024-01-02 | 2024-01-09 |
| 156 | U611 REC full funtion test | 10d | 2024-01-22 | 2024-02-02 |
| 157 | U611 VOCF/NTT | 48d | 2024-02-24 | 2024-04-30 |

Removed: 149 软件自测; 150 DID 配置入口; 151 carplay 同步到 master 分支; 152 集成测试(DISABLE 基本功能测试+carplay 测试); 154 carplay 同步到 master 分支（YF改动点 audio HAL ,BT）; 155 carplay 功能测试

Changed:

| ID | Task | Start | Finish | Duration | Complete | Total float | Other |
| --- | --- | --- | --- | --- | --- | --- | --- |
| 18 | **SYNC+ 3.0(U6xx)** |  |  |  | 72% → 66% |  |  |
| 104 | **CarPlay certification** |  |  |  | 32% → 40% |  |  |
| 111 | Submit Integration design/Graphics review | 2023-09-11 A | 2023-10-13 → 2023-11-17 (+35d) | 20d → 45d | 0% → 75% | 148d → 123d | constraint start no earlier than 2023-09-11 → finish no earlier than 2023-11-17 |
| 112 | **Carplay bench test (2 pre-test + 2 test) FACETS** |  |  |  | 3% → 6% |  |  |
| 113 | 1st round of pre-test |  | 2023-11-14 → 2023-11-07 (-7d) | 15d → 10d | 25% → 75% | 126d → 131d |  |
| 139 | **版本释放** |  |  |  | 6% → 13% |  |  |
| 141 | 2nd 软件 | 2023-10-23 A | 2023-10-27 A |  | 0% → 100% |  |  |
